# RD WBS模板

Schedule from MS Project, 2005-11-29 to 2005-12-06.

## Calendars

- Standard: Mon-Fri 08:00-12:00, 13:00-17:00; Sat-Sun off.

## Resources

| Resource |
| --- |
| LPDT |
| MKTPDT |
| PP |
| AME |
| PRO |
| MKTE |
| FF |
| S |
| TD |
| RDPDT |
| SE |
| EE |
| SWE |
| ME |
| TE |
| D&PPDT |
| TSS |
| IDEUCD |
| ESP |
| MOPS |
| FPDT |
| TSPDT |
| MNFPDT |
| PROPDT |
| IPMT |
| POP |
| R&DPDT |
| IDE |
| DPPDT |
| Quality Management Eng. |
| PDT |
| LMT |
| PL |
| TM |
| QA |
| 产品CMO |
| PQA |
| LPDT/LTDT |
| PDT核心团队 |
| MC |
| UCD |
| EE-CA |
| EE-BIT |
| EE-CE |
| DRB主任 |
| DRB主任/主审 |
| DRB团队 |

## Schedule

| ID | WBS | Task | Duration | Start | Finish | Predecessors | Baseline start | Baseline finish | Baseline duration | Total slack | Free slack | Resources | Work | 活动编码 | 输出 | 活动号 | Text30 | Text12 |
| --- | --- | --- | --- | --- | --- | --- | --- | --- | --- | --- | --- | --- | --- | --- | --- | --- | --- | --- |
| 1 | 1 | **IPD概念阶段研发领域WBS 3、4级计划** | 5d | 2005-11-29 | 2005-12-05 |  | 2001-03-20 | 2001-03-20 | 1d | 1d |  |  | 512h |  |  |  |  |  |
| 2 | 1.1 | **研发管理** | 2d | 2005-11-29 | 2005-11-30 |  | 2005-11-29 | 2005-11-29 | 1d | 4d |  |  | 112h |  |  |  |  |  |
| 3 | 1.1.1 | 准备产品研发环境 | 1d | 2005-11-29 | 2005-11-29 |  | 2005-11-29 | 2005-11-29 | 1d | 5d |  | 产品CMO | 8h | 001201010 |  |  |  |  |
| 4 | 1.1.2 | 组织研发估计 | 1d | 2005-11-29 | 2005-11-29 |  | 2001-03-20 | 2001-03-20 | 1d | 5d |  |  |  | 001201020 |  |  |  |  |
| 5 | 1.1.3 | 组织开工会 | 1d | 2005-11-29 | 2005-11-29 |  | 2005-11-29 | 2005-11-29 | 1d | 5d |  |  |  | 001201070 |  |  |  |  |
| 6 | 1.1.4 | 度量分析 | 1d | 2005-11-29 | 2005-11-29 |  | 2005-11-29 | 2005-11-29 | 1d | 5d |  | MC | 8h | 001201080 | 《度量分析报告》 |  |  |  |
| 7 | 1.1.5 | **制定产品包开发主计划** | 1d | 2005-11-29 | 2005-11-29 |  | 2001-03-20 | 2001-03-20 | 1d | 4d |  |  | 80h |  |  | RDPDT-40 |  |  |
| 8 | 1.1.5.1 | 组织估计 | 1d | 2005-11-29 | 2005-11-29 |  | 2005-11-29 | 2005-11-29 | 1d | 5d |  |  |  | 001201090 |  |  |  |  |
| 9 | 1.1.5.2 | 制定产品包开发主计划 | 1d | 2005-11-29 | 2005-11-29 |  | 2005-11-29 | 2005-11-29 | 1d | 5d |  | SE; 产品CMO; PQA | 24h | 001201100 | 《概念阶段产品包开发主计划》、《RD WBS》 |  |  |  |
| 10 | 1.1.5.3 | 制定风险管理计划 | 1d | 2005-11-29 | 2005-11-29 |  | 2005-11-29 | 2005-11-29 | 1d | 5d |  | SE; 产品CMO; PQA | 24h | 001201110 | 《研发集成跟踪表》 |  |  |  |
| 11 | 1.1.5.4 | 评审产品包开发主计划和风险管理计划 | 1d | 2005-11-29 | 2005-11-29 |  | 2005-11-29 | 2005-11-29 | 1d | 5d |  | SE; 产品CMO; PQA; LPDT/LTDT | 32h | 001201120 |  |  |  |  |
| 12 | 1.1.5.5 | 批准产品包开发主计划 | 1d | 2005-11-29 | 2005-11-29 |  | 2005-11-29 | 2005-11-29 | 1d | 4d | 0d |  |  | 001201130 |  |  |  |  |
| 13 | 1.1.6 | **制定配置管理计划** | 2d | 2005-11-29 | 2005-11-30 |  | 2005-11-29 | 2005-11-29 | 1d | 4d |  |  | 16h |  |  |  |  |  |
| 14 | 1.1.6.1 | 制定配置管理计划 | 1d | 2005-11-29 | 2005-11-29 |  | 2005-11-29 | 2005-11-29 | 1d | 5d |  | RDPDT | 8h | 001201140 | 《产品配置管理计划》 |  |  |  |
| 15 | 1.1.6.2 | 评审配置管理计划 | 0.33d | 2005-11-29 | 2005-11-29 |  | 2005-11-29 | 2005-11-29 | 1d | 5.67d |  | RDPDT; SE; PQA | 8h | 001201150 |  |  |  |  |
| 16 | 1.1.6.3 | 批准配置管理计划 | 1d | 2005-11-30 | 2005-11-30 |  | 2005-11-29 | 2005-11-29 | 1d | 4d |  |  |  | 001201160 |  |  |  |  |
| 17 | 1.1.7 | 参与制定产品包/解决方案商业计划和端到端项目计划（WBS1/2） | 1d | 2005-11-29 | 2005-11-29 |  | 2005-11-29 | 2005-11-29 | 1d | 5d |  |  |  | 001100300 | 《产品包与解决方案商业计划》 | RDPDT-50 |  |  |
| 18 | 1.2 | **系统开发** | 5d | 2005-11-29 | 2005-12-05 |  | 2005-11-29 | 2005-11-29 | 1d | 1d |  |  | 344h |  |  |  |  |  |
| 19 | 1.2.1 | 制定系统工程计划 | 1d | 2005-11-29 | 2005-11-29 |  | 2005-11-29 | 2005-11-29 | 1d | 5d |  |  |  |  |  |  |  |  |
| 20 | 3 | 确定是否需要UCD | 1d | 2005-11-29 | 2005-11-29 |  | 2005-11-29 | 2005-11-29 | 1d | 2d | 0d | UCD | 8h | 001280100 |  | UCD-10 | 001280100 |  |
| 21 | 1.2.2 | 制定UCD目标和计划 | 3d | 2005-11-30 | 2005-12-02 | 20 | 2005-11-30 | 2005-12-02 | 3d | 2d |  | UCD | 24h | 001280150 |  | UCD-15 | 001280150 | UCD计划 |
| 22 | 1.2.4 | 进行知识产权/智力资产分析和评估技术可选方案 | 1d | 2005-11-29 | 2005-11-29 |  | 2005-11-29 | 2005-11-29 | 1d | 5d |  | EE-CA [50%]; SE [50%] | 8h | 001200300 | 知识产权计划概要、智力资产计划概要、共用软件和硬件计划 | RDPDT-30,SE-05 |  |  |
| 23 | 1.2.5 | 探索和评估可选的用户概念 | 1d | 2005-11-29 | 2005-11-29 |  | 2005-11-29 | 2005-11-29 | 1d | 5d |  | UCD | 8h | 001280300 |  | UCD-30 |  |  |
| 24 | 18 | 产生和评估产品包概念并选择一个概念 | 3d | 2005-11-29 | 2005-12-01 |  | 2005-11-29 | 2005-12-01 | 3d | 3d |  | TE; IDE; ME; SWE; EE; SE; RDPDT | 168h | 001200350 |  | RDPDT-35,SE-07,EE-12, SWE-12,ME-12 ,IDE-27,TE-17 | 001200350 |  |
| 25 | 21 | 制定标准策略 | 5d | 2005-11-29 | 2005-12-05 |  | 2005-11-29 | 2005-12-05 | 5d | 1d |  | SE | 40h | 001210090 |  | SE-09 | 001210090 | 产品标准策略 |
| 26 | 23 | 确定产品包概念和设计需求 | 5d | 2005-11-29 | 2005-12-05 |  | 2005-11-29 | 2005-12-05 | 5d | 1d |  | SE | 40h | 001210100 |  | SE-10 | 001210100 | 产品备选概念、设计需求 |
| 27 | 26 | 创建早期BOM（开发过程中更新）提供新器件规格 | 3d | 2005-11-29 | 2005-12-01 |  | 2005-11-29 | 2005-12-01 | 3d | 3d |  | SE | 24h | 001210350 |  | SE-35 | 001210350 |  |
| 28 | 35 | 制定初始EC计划 | 3d | 2005-11-29 | 2005-12-01 |  | 2005-11-29 | 2005-12-01 | 3d | 3d |  | SE | 24h | 001210450 |  | SE-45 | 001210450 |  |

Notes:
- 8: 估计CDCP到GA/TDCP点的研发工作量、进度、资源等

| ID | WBS | Task | Duration | Start | Finish | Predecessors | Baseline start | Baseline finish | Baseline duration | Total slack | Free slack | Resources | Work | 输出 | 活动号 | 活动编码 |
| --- | --- | --- | --- | --- | --- | --- | --- | --- | --- | --- | --- | --- | --- | --- | --- | --- |
| 29 | 1.3 | **产品测试** | 1d | 2005-11-29 | 2005-11-29 |  | 2005-11-29 | 2005-11-29 | 1d | 5d |  |  |  |  |  |  |
| 30 | 1.3.1 | 制定产品包验证主计划 | 1d | 2005-11-29 | 2005-11-29 |  | 2005-11-29 | 2005-11-29 | 1d | 5d |  |  |  |  |  |  |
| 31 | 1.4 | DRB评审 | 1d | 2005-11-29 | 2005-11-29 |  | 2005-11-29 | 2005-11-29 | 1d | 5d |  | PQA; SE; DRB团队 | 24h | 《DRB评审报告》 |  |  |
| 32 | 1.5 | 技术评审1 | 1d | 2005-11-29 | 2005-11-29 |  | 2001-03-20 | 2001-03-20 | 1d | 5d |  | PDT核心团队 [75%]; LPDT [75%]; PQA [75%]; DRB主任 [75%] | 24h |  | SE-20 | 001210200 |
| 33 | 1.6 | 概念阶段决策评审 | 1d | 2005-11-30 | 2005-11-30 | 12 | 2001-03-20 | 2001-03-20 | 1d | 4d |  | IPMT | 8h |  | IPMT-20 | 001000200 |
| 34 | 2 | **IPD计划阶段研发领域WBS 3、4级计划** | 5d | 2005-11-29 | 2005-12-05 |  | 2001-03-20 | 2001-03-22 | 3d | 1d |  |  | 456h |  |  |  |
| 35 | 2.1 | **研发管理** | 4d | 2005-11-29 | 2005-12-02 |  | 2005-11-29 | 2005-11-29 | 1d | 1d |  |  | 304h |  |  |  |
| 36 | 2.1.1 | **修订项目计划** | 1d | 2005-11-29 | 2005-11-29 |  | 2005-11-29 | 2005-11-29 | 1d | 5d |  |  | 48h |  |  |  |
| 37 | 2.1.1.1 | 组织重估计 | 1d | 2005-11-29 | 2005-11-29 |  | 2005-11-29 | 2005-11-29 | 1d | 5d |  |  |  |  |  | 001201170 |
| 38 | 2.1.1.2 | 修订项目计划 | 1d | 2005-11-29 | 2005-11-29 |  | 2005-11-29 | 2005-11-29 | 1d | 5d |  | SE; 产品CMO; PQA | 24h | 《产品包开发主计划》 | RDPDT-55 | 001201180 |
| 39 | 2.1.1.3 | 评审项目计划 | 0.75d | 2005-11-29 | 2005-11-29 |  | 2005-11-29 | 2005-11-29 | 1d | 5.25d |  | SE; 产品CMO; PQA; LPDT | 24h |  |  | 001201190 |
| 40 | 2.1.1.4 | 批准项目计划 | 1d | 2005-11-29 | 2005-11-29 |  | 2005-11-29 | 2005-11-29 | 1d | 5d |  |  |  |  |  | 001201200 |
| 41 | 2.1.2 | **制定Build计划** | 1d | 2005-11-29 | 2005-11-29 |  | 2001-03-20 | 2001-03-20 | 1d | 5d |  |  | 32h |  | RDPDT-59 |  |
| 42 | 2.1.2.1 | 制定Build计划 | 1d | 2005-11-29 | 2005-11-29 |  | 2005-11-29 | 2005-11-29 | 1d | 5d |  | SE | 8h | 《Build计划》 |  | 001201210 |
| 43 | 2.1.2.2 | 评审Build计划 | 1d | 2005-11-29 | 2005-11-29 |  | 2005-11-29 | 2005-11-29 | 1d | 5d |  | SE; TM; QA | 24h |  |  | 001201220 |
| 44 | 2.1.2.3 | 批准Build计划 | 1d | 2005-11-29 | 2005-11-29 |  | 2005-11-29 | 2005-11-29 | 1d | 5d |  |  |  |  |  | 001201230 |
| 45 | 2.1.3 | 组织研发估计 | 1d | 2005-11-29 | 2005-11-29 |  | 2005-11-29 | 2005-11-29 | 1d | 5d |  |  |  |  |  | 001201240 |
| 46 | 2.1.4 | **制定软件开发组的SOW** | 4d | 2005-11-29 | 2005-12-02 |  | 2005-11-29 | 2005-11-29 | 1d | 2d |  |  | 48h |  |  |  |
| 47 | 2.1.4.1 | 制定软件开发组1的SOW | 2d | 2005-11-30 | 2005-12-01 | 75 | 2005-11-29 | 2005-11-29 | 1d | 3d |  | PL; SE | 16h | 《Statement of Work》 |  | 001201250 |
| 48 | 2.1.4.2 | 制定软件开发组N的SOW | 2d | 2005-11-29 | 2005-11-30 |  | 2005-11-29 | 2005-11-29 | 1d | 4d |  | PL; SE | 16h |  |  | 001201260 |
| 49 | 2.1.4.3 | 评审软件项目组的SOW | 2d | 2005-12-01 | 2005-12-02 |  | 2005-11-29 | 2005-11-29 | 1d | 2d |  | PL; SE | 16h |  |  | 001201270 |
| 50 | 2.1.4.4 | 签发软件项目组的SOW | 1d | 2005-11-29 | 2005-11-29 |  | 2005-11-29 | 2005-11-29 | 1d | 2d | 0d |  |  |  |  | 001201280 |
| 51 | 2.1.5 | **制定硬件项目组的SOW** | 2d | 2005-11-29 | 2005-11-30 |  | 2005-11-29 | 2005-11-29 | 1d | 1d |  |  | 48h |  |  |  |
| 52 | 2.1.5.1 | 制定硬件项目组1的SOW | 1d | 2005-11-30 | 2005-11-30 | 75 | 2005-11-29 | 2005-11-29 | 1d | 4d |  | PL; SE | 16h | 《Statement of Work》 |  | 001201290 |
| 53 | 2.1.5.2 | 制定硬件项目组N的SOW | 1d | 2005-11-29 | 2005-11-29 |  | 2005-11-29 | 2005-11-29 | 1d | 5d |  | PL; SE | 16h |  |  | 001201300 |
| 54 | 2.1.5.3 | 评审硬件项目组的SOW | 1d | 2005-11-29 | 2005-11-29 |  | 2005-11-29 | 2005-11-29 | 1d | 5d |  | PL; SE | 16h |  |  | 001201310 |
| 55 | 2.1.5.4 | 签发硬件项目组的SOW | 1d | 2005-11-29 | 2005-11-29 |  | 2005-11-29 | 2005-11-29 | 1d | 1d | 0d |  |  |  |  | 001201320 |

| ID | WBS | Task | Duration | Start | Finish | Predecessors | Baseline start | Baseline finish | Baseline duration | Total slack | Free slack | Resources | Work | 活动编码 | 输出 | 活动号 | Text12 | Text30 |
| --- | --- | --- | --- | --- | --- | --- | --- | --- | --- | --- | --- | --- | --- | --- | --- | --- | --- | --- |
| 56 | 2.1.6 | **制定逻辑开发组的SOW** | 2d | 2005-11-29 | 2005-11-30 |  | 2005-11-29 | 2005-11-29 | 1d | 2d |  |  | 48h |  |  |  |  |  |
| 57 | 2.1.6.1 | 制定逻辑开发组1的SOW | 1d | 2005-11-30 | 2005-11-30 | 75 | 2005-11-29 | 2005-11-29 | 1d | 4d |  | PL; SE | 16h | 001201330 | 《Statement of Work》 |  |  |  |
| 58 | 2.1.6.2 | 制定逻辑开发组2的SOW | 1d | 2005-11-29 | 2005-11-29 |  | 2005-11-29 | 2005-11-29 | 1d | 5d |  | PL; SE | 16h | 001201340 |  |  |  |  |
| 59 | 2.1.6.3 | 评审逻辑开发组的SOW | 1d | 2005-11-29 | 2005-11-29 |  | 2005-11-29 | 2005-11-29 | 1d | 5d |  | PL; SE | 16h | 001201350 |  |  |  |  |
| 60 | 2.1.6.4 | 签发逻辑开发组的SOW | 1d | 2005-11-29 | 2005-11-29 |  | 2005-11-29 | 2005-11-29 | 1d | 2d | 0d |  |  | 001201360 |  |  |  |  |
| 61 | 2.1.7 | **制定整机开发组的SOW** | 2d | 2005-11-29 | 2005-11-30 |  | 2005-11-29 | 2005-11-29 | 1d | 4d |  |  | 32h |  |  |  |  |  |
| 62 | 2.1.7.1 | 制定整机开发组的SOW | 1d | 2005-11-30 | 2005-11-30 | 75 | 2005-11-29 | 2005-11-29 | 1d | 4d |  | PL; SE | 16h | 001201370 | 《Statement of Work》 |  |  |  |
| 63 | 2.1.7.2 | 评审整机开发组的SOW | 1d | 2005-11-29 | 2005-11-29 |  | 2005-11-29 | 2005-11-29 | 1d | 5d |  | PL; SE | 16h | 001201380 |  |  |  |  |
| 64 | 2.1.7.3 | 签发整机开发组的SOW | 1d | 2005-11-29 | 2005-11-29 |  | 2005-11-29 | 2005-11-29 | 1d | 4d | 0d |  |  | 001201390 |  |  |  |  |
| 65 | 2.1.8 | **制定资料开发组的SOW** | 2d | 2005-11-29 | 2005-11-30 |  | 2005-11-29 | 2005-11-29 | 1d | 4d |  |  | 32h |  |  |  |  |  |
| 66 | 2.1.8.1 | 制定资料开发组的SOW | 1d | 2005-11-30 | 2005-11-30 | 75 | 2005-11-29 | 2005-11-29 | 1d | 4d |  | PL; SE | 16h | 001201400 | 《Statement of Work》 |  |  |  |
| 67 | 2.1.8.2 | 评审资料开发组的SOW | 1d | 2005-11-29 | 2005-11-29 |  | 2005-11-29 | 2005-11-29 | 1d | 5d |  | PL; SE | 16h | 001201410 |  |  |  |  |
| 68 | 2.1.8.3 | 签发资料开发组的SOW | 1d | 2005-11-29 | 2005-11-29 |  | 2005-11-29 | 2005-11-29 | 1d | 4d | 0d |  |  | 001201420 |  |  |  |  |
| 69 | 2.1.9 | **制定产品测试SOW** | 2d | 2005-11-29 | 2005-11-30 |  | 2005-11-29 | 2005-11-29 | 1d | 4d |  |  | 16h |  |  |  |  |  |
| 70 | 2.1.9.1 | 制定产品测试SOW | 1d | 2005-11-30 | 2005-11-30 | 75 | 2005-11-29 | 2005-11-29 | 1d | 4d |  | TM | 8h | 001201430 | 《Statement of Work》 |  |  |  |
| 71 | 2.1.9.2 | 评审产品测试SOW | 1d | 2005-11-29 | 2005-11-29 |  | 2005-11-29 | 2005-11-29 | 1d | 5d |  | TM | 8h | 001201440 |  |  |  |  |
| 72 | 2.1.9.3 | 签发产品测试SOW | 1d | 2005-11-29 | 2005-11-29 |  | 2005-11-29 | 2005-11-29 | 1d | 4d | 0d |  |  | 001201450 |  |  |  |  |
| 73 | 2.1.10 | 参与优化商业和端到端计划(WBS 1/2) | 1d | 2005-11-29 | 2005-11-29 |  | 2005-11-29 | 2005-11-29 | 1d | 5d |  |  |  | 001100600 |  | LPDT-60 |  |  |
| 74 | 2.1.11 | 度量分析(TR2前） | 1d | 2005-11-29 | 2005-11-29 |  | 2001-03-20 | 2001-03-20 | 1d | 5d |  |  |  | 001201460 |  |  |  |  |
| 75 | 2.1.12 | 组建研发各扩展组 | 1d | 2005-11-29 | 2005-11-29 |  | 2005-11-29 | 2005-11-29 | 1d | 3d | 0d |  |  | 001201470 |  |  |  |  |
| 76 | 2.1.13 | 度量分析（TR3前) | 1d | 2005-11-29 | 2005-11-29 |  | 2005-11-29 | 2005-11-29 | 1d | 5d |  |  |  | 001201480 |  |  |  |  |
| 77 | 2.1.14 | 建立分配基线 | 1d | 2005-11-29 | 2005-11-29 |  | 2005-11-29 | 2005-11-29 | 1d | 5d |  |  |  | 001201490 |  |  |  |  |
| 78 | 2.2 | **系统开发** | 1.33d | 2005-11-29 | 2005-11-30 |  | 2005-11-29 | 2005-11-29 | 1d | 4.67d |  |  | 96h |  |  |  |  |  |
| 79 | 2.2.1 | 优化SE-WBS 1/2/3/4级计划 | 1d | 2005-11-29 | 2005-11-29 |  | 2005-11-29 | 2005-11-29 | 1d | 5d |  |  |  |  |  |  |  |  |
| 80 | 2.2.2 | 可用性需求分解分配 | 1d | 2005-11-29 | 2005-11-29 |  | 2005-11-29 | 2005-11-29 | 1d | 5d |  | UCD | 8h |  |  | UCD-50 |  |  |
| 81 | 2.2.3 | 系统能效分析和评估 | 1d | 2005-11-29 | 2005-11-29 |  |  |  |  | 5d |  |  |  |  | 产品能效规格 |  |  |  |
| 82 | 2.2.4 | 系统设计和系统规格定义 | 1d | 2005-11-29 | 2005-11-29 |  | 2005-11-29 | 2005-11-29 | 1d | 5d |  | EE-BIT; EE-CE; EE-CA; TSS; TE | 40h |  |  | SE-60 |  |  |
| 83 | 1.12 | 架构评审 | 1d | 2005-11-29 | 2005-11-29 |  | 2005-11-29 | 2005-11-29 | 1d | 5d |  | SE | 8h | 001210640 |  | SE-64 | 系统架构 | 001210640 |
| 84 | 2.2.6 | 创建和评估高保真原型 | 1d | 2005-11-29 | 2005-11-29 |  | 2005-11-29 | 2005-11-29 | 1d | 5d |  | UCD | 8h |  |  | UCD-60 |  |  |
| 85 | 1.22 | 知识产权分析 | 1d | 2005-11-29 | 2005-11-29 |  | 2005-11-29 | 2005-11-29 | 1d | 5d |  | SE | 8h | 001210980 |  | SE-98 |  | 001210980 |
| 86 | 2.2.8 | 产品数据结构分析 | 1d | 2005-11-29 | 2005-11-29 |  | 2005-11-29 | 2005-11-29 | 1d | 5d |  |  |  |  |  | SE-99 |  |  |
| 87 | 1.24 | 开发初始SBOM | 1.33d | 2005-11-29 | 2005-11-30 |  | 2005-11-29 | 2005-11-30 | 1.33d | 4.67d |  | SE; PROPDT | 16h | 001210991 |  | SE-99A,PROPDT-47A |  | 001210991 |
| 88 | 2.2.10 | 开发BBOM | 1d | 2005-11-29 | 2005-11-29 |  |  |  |  | 5d |  |  |  |  |  | RDPDT-59A |  |  |
| 89 | 2.2.11 | 早期投标文档支持 | 1d | 2005-11-29 | 2005-11-29 |  | 2005-11-29 | 2005-11-29 | 1d | 5d |  | SE | 8h |  | 早期投标支撑文档 |  |  |  |
| 90 | 2.2.12 | 资料交付件设计 | 1d | 2005-11-29 | 2005-11-29 |  |  |  |  | 5d |  |  |  |  | 资料交付件设计 |  |  |  |

| ID | WBS | Task | Duration | Start | Finish | Predecessors | Baseline start | Baseline finish | Baseline duration | Total slack | Free slack |
| --- | --- | --- | --- | --- | --- | --- | --- | --- | --- | --- | --- |
| 91 | 2.3 | **软件开发** | 4d | 2005-11-29 | 2005-12-02 |  | 2001-03-20 | 2001-03-20 | 1d | 2d |  |
| 92 | 2.3.1 | **软件开发组1** | 4d | 2005-11-29 | 2005-12-02 |  | 2005-11-29 | 2005-11-29 | 1d | 2d |  |
| 93 | 2.3.1.1 | 制定PHB | 1d | 2005-11-30 | 2005-11-30 | 50 | 2005-11-29 | 2005-11-29 | 1d | 2d | 0d |
| 94 | 2.3.1.2 | 制定项目计划 | 1d | 2005-12-01 | 2005-12-01 | 93 | 2005-11-29 | 2005-11-29 | 1d | 2d | 0d |
| 95 | 2.3.1.3 | 开发SRS | 1d | 2005-12-02 | 2005-12-02 | 94 | 2001-03-20 | 2001-03-20 | 1d | 2d |  |
| 96 | 2.3.1.4 | 制定STP | 1d | 2005-11-29 | 2005-11-29 |  | 2005-11-29 | 2005-11-29 | 1d | 5d |  |
| 97 | 2.3.2 | **软件开发组N** | 3d | 2005-11-29 | 2005-12-01 |  | 2005-11-29 | 2005-11-29 | 1d | 3d |  |
| 98 | 2.3.2.1 | 制定PHB | 1d | 2005-11-29 | 2005-11-29 |  | 2005-11-29 | 2005-11-29 | 1d | 5d |  |
| 99 | 2.3.2.2 | 制定项目计划 | 1d | 2005-11-29 | 2005-11-29 |  | 2005-11-29 | 2005-11-29 | 1d | 3d | 0d |
| 100 | 2.3.2.3 | 开发SRS | 1d | 2005-11-30 | 2005-11-30 | 99 | 2001-03-20 | 2001-03-20 | 1d | 3d | 0d |
| 101 | 2.3.2.4 | 制定STP | 1d | 2005-12-01 | 2005-12-01 | 100 | 2005-12-01 | 2005-12-01 | 1d | 3d |  |
| 102 | 2.4 | **硬件开发** | 5d | 2005-11-29 | 2005-12-05 |  | 2001-03-20 | 2001-03-20 | 1d | 1d |  |
| 103 | 2.4.1 | **硬件项目组1** | 4d | 2005-11-30 | 2005-12-05 |  | 2005-11-29 | 2005-11-29 | 1d | 1d |  |
| 104 | 2.4.1.1 | 制定PHB | 1d | 2005-11-30 | 2005-11-30 | 55 | 2005-11-29 | 2005-11-29 | 1d | 1d | 0d |
| 105 | 2.4.1.2 | 制定项目计划 | 1d | 2005-12-01 | 2005-12-01 | 104 | 2005-11-29 | 2005-11-29 | 1d | 1d | 0d |
| 106 | 2.4.1.3 | 进行单板1总体设计 | 1d | 2005-12-02 | 2005-12-02 | 105 | 2001-03-20 | 2001-03-20 | 1d | 1d | 0d |
| 107 | 2.4.1.4 | 进行单板N总体设计 | 1d | 2005-12-05 | 2005-12-05 | 106 | 2005-11-29 | 2005-11-29 | 1d | 1d |  |
| 108 | 2.4.2 | **硬件项目组N** | 4d | 2005-11-29 | 2005-12-02 |  | 2005-11-29 | 2005-11-29 | 1d | 2d |  |
| 109 | 2.4.2.1 | 制定PHB | 1d | 2005-11-29 | 2005-11-29 |  | 2005-11-29 | 2005-11-29 | 1d | 2d | 0d |
| 110 | 2.4.2.2 | 制定项目计划 | 1d | 2005-11-30 | 2005-11-30 | 109 | 2005-11-29 | 2005-11-29 | 1d | 2d | 0d |
| 111 | 2.4.2.3 | 进行单板1总体设计 | 1d | 2005-12-01 | 2005-12-01 | 110 | 2005-11-29 | 2005-11-29 | 1d | 2d | 0d |
| 112 | 2.4.2.4 | 进行单板N总体设计 | 1d | 2005-12-02 | 2005-12-02 | 111 | 2001-03-20 | 2001-03-20 | 1d | 2d |  |
| 113 | 2.5 | **逻辑开发** | 4d | 2005-11-29 | 2005-12-02 |  | 2001-03-20 | 2001-03-20 | 1d | 2d |  |
| 114 | 2.5.1 | **逻辑开发组1** | 3d | 2005-11-30 | 2005-12-02 |  | 2005-11-29 | 2005-11-29 | 1d | 2d |  |
| 115 | 2.5.1.1 | 制定PHB | 1d | 2005-11-30 | 2005-11-30 | 60 | 2005-11-29 | 2005-11-29 | 1d | 2d | 0d |
| 116 | 2.5.1.2 | 制定项目计划 | 1d | 2005-12-01 | 2005-12-01 | 115 | 2005-11-29 | 2005-11-29 | 1d | 2d | 0d |
| 117 | 2.5.1.3 | 开发LRS | 1d | 2005-12-02 | 2005-12-02 | 116 | 2001-03-20 | 2001-03-20 | 1d | 2d |  |

| ID | WBS | Task | Duration | Start | Finish | Predecessors | Baseline start | Baseline finish | Baseline duration | Total slack | Free slack | Resources | Work | 输出 | 活动号 | 活动编码 |
| --- | --- | --- | --- | --- | --- | --- | --- | --- | --- | --- | --- | --- | --- | --- | --- | --- |
| 118 | 2.5.2 | **逻辑开发组N** | 4d | 2005-11-29 | 2005-12-02 |  | 2005-11-29 | 2005-11-29 | 1d | 2d |  |  |  |  |  |  |
| 119 | 2.5.2.1 | 制定PHB | 1d | 2005-11-29 | 2005-11-29 |  | 2005-11-29 | 2005-11-29 | 1d | 4d | 0d |  |  |  |  |  |
| 120 | 2.5.2.2 | 制定项目计划 | 1d | 2005-11-30 | 2005-11-30 | 119 | 2005-11-29 | 2005-11-29 | 1d | 4d |  |  |  |  |  |  |
| 121 | 1.2.5.2.1 | 开发LRS | 1d | 2005-12-02 | 2005-12-02 | 116 | 2005-11-29 | 2005-11-29 | 1d | 2d |  |  |  |  |  |  |
| 122 | 2.6 | **整机开发** | 2d | 2005-11-29 | 2005-11-30 |  | 2001-03-20 | 2001-03-20 | 1d | 4d |  |  |  |  |  |  |
| 123 | 2.6.1 | 制定项目计划 | 1d | 2005-11-30 | 2005-11-30 | 64 | 2005-11-29 | 2005-11-29 | 1d | 4d |  |  |  |  |  |  |
| 124 | 2.6.2 | 进行整机概要设计 | 1d | 2005-11-29 | 2005-11-29 |  | 2005-11-29 | 2005-11-29 | 1d | 5d |  |  |  |  |  |  |
| 125 | 2.7 | **资料开发** | 1d | 2005-11-30 | 2005-11-30 |  | 2001-03-20 | 2001-03-20 | 1d | 4d |  |  |  |  |  |  |
| 126 | 2.7.1 | 制定资料计划 | 1d | 2005-11-30 | 2005-11-30 | 68 | 2005-11-29 | 2005-11-29 | 1d | 4d |  |  |  |  |  |  |
| 127 | 2.8 | **产品测试** | 2d | 2005-11-29 | 2005-11-30 |  | 2005-11-29 | 2005-11-29 | 1d | 4d |  |  |  |  |  |  |
| 128 | 2.8.1 | 制定测试组PHB | 1d | 2005-11-30 | 2005-11-30 | 72 | 2005-11-29 | 2005-11-29 | 1d | 4d |  |  |  |  |  |  |
| 129 | 2.8.2 | 制定测试组计划 | 1d | 2005-11-29 | 2005-11-29 |  | 2005-11-29 | 2005-11-29 | 1d | 5d |  |  |  |  |  |  |
| 130 | 2.8.3 | 进行测试需求分析 | 1d | 2005-11-29 | 2005-11-29 |  | 2005-11-29 | 2005-11-29 | 1d | 5d |  |  |  |  |  |  |
| 131 | 2.8.4 | 制定产品总体测试策略 | 1d | 2005-11-29 | 2005-11-29 |  | 2005-11-29 | 2005-11-29 | 1d | 5d |  |  |  |  |  |  |
| 132 | 2.8.5 | 制定测试与验证计划 | 1d | 2005-11-29 | 2005-11-29 |  | 2005-11-29 | 2005-11-29 | 1d | 5d |  |  |  |  |  |  |
| 133 | 2.8.6 | 制定测试方案设计 | 1d | 2005-11-29 | 2005-11-29 |  | 2005-11-29 | 2005-11-29 | 1d | 5d |  |  |  |  |  |  |
| 134 | 2.9 | DRB评审 | 1d | 2005-11-29 | 2005-11-29 |  | 2005-11-29 | 2005-11-29 | 1d | 5d |  | PQA; SE; DRB团队 | 24h | 《DRB评审报告》 |  |  |
| 135 | 2.10 | 技术评审2 | 0.33d | 2005-12-01 | 2005-12-01 |  | 2001-03-20 | 2001-03-20 | 1d | 3.67d |  | PDT核心团队 [75%]; LPDT [75%]; PQA [75%]; DRB主任 [75%] | 8h |  | SE-70 | 001210700 |
| 136 | 2.11 | 技术评审3 | 1d | 2005-11-29 | 2005-11-29 |  | 2001-03-20 | 2001-03-20 | 1d | 5d |  | PDT核心团队; LPDT; PQA | 24h |  | SE-100 | 001211000 |
| 137 | 2.12 | 计划决策评审点 | 1d | 2005-11-29 | 2005-11-29 |  | 2001-03-20 | 2001-03-20 | 1d | 5d |  |  |  |  | IPMT-40 | 001000400 |
| 138 | 3 | **IPD开发阶段研发领域WBS 3、4级计划** | 5d | 2005-11-29 | 2005-12-05 |  | 2001-03-20 | 2001-03-22 | 3d | 1d |  |  | 216h |  |  |  |
| 139 | 3.1 | **研发管理** | 1d | 2005-11-29 | 2005-11-29 |  | 2005-11-29 | 2005-11-29 | 1d | 5d |  |  | 24h |  |  |  |
| 140 | 3.1.1 | 组建BBIT组 | 1d | 2005-11-29 | 2005-11-29 |  | 2001-03-20 | 2001-03-20 | 1d | 5d |  |  |  |  | RDPDT-66 | 001201500 |
| 141 | 3.1.2 | 度量分析(TR4前） | 1d | 2005-11-29 | 2005-11-29 |  | 2001-03-20 | 2001-03-20 | 1d | 5d |  | MC | 8h | 《度量分析报告》 |  | 001201510 |
| 142 | 3.1.3 | 组织重估计（TR4后) | 1d | 2005-11-29 | 2005-11-29 |  | 2001-03-20 | 2001-03-20 | 1d | 5d |  |  |  |  |  | 001201520 |
| 143 | 3.1.4 | 组建支持组 | 1d | 2005-11-29 | 2005-11-29 |  | 2001-03-20 | 2001-03-20 | 1d | 5d |  |  |  |  |  | 001201530 |
| 144 | 3.1.5 | 度量分析（TR4A前) | 1d | 2005-11-29 | 2005-11-29 |  | 2001-03-20 | 2001-03-20 | 1d | 5d |  | MC | 8h | 《度量分析报告》 |  | 001201540 |
| 145 | 3.1.6 | 度量分析（TR5前） | 1d | 2005-11-29 | 2005-11-29 |  | 2005-11-29 | 2005-11-29 | 1d | 5d |  | MC | 8h | 《度量分析报告》 |  | 001201550 |

| ID | WBS | Task | Duration | Start | Finish | Predecessors | Baseline start | Baseline finish | Baseline duration | Total slack | Free slack | Resources | Work | 活动号 | 活动编码 | Text30 | Text12 |
| --- | --- | --- | --- | --- | --- | --- | --- | --- | --- | --- | --- | --- | --- | --- | --- | --- | --- |
| 146 | 3.2 | **系统开发** | 5d | 2005-11-29 | 2005-12-05 |  | 2005-11-29 | 2005-11-29 | 1d | 1d |  |  | 104h |  |  |  |  |
| 147 | 3.2.1 | 执行标准计划 | 1d | 2005-11-29 | 2005-11-29 |  | 2005-11-29 | 2005-11-29 | 1d | 5d |  |  |  | SE-127 |  |  |  |
| 148 | 2.11 | 发布初始BOM | 5d | 2005-11-29 | 2005-12-05 |  | 2005-11-29 | 2005-12-05 | 5d | 1d |  | SE | 40h | SE-130 | 001211300 | 001211300 |  |
| 149 | 3.2.3 | 评估设计和实现间的保真度 | 1d | 2005-11-29 | 2005-11-29 |  | 2005-11-29 | 2005-11-29 | 1d | 5d |  | UCD | 8h | UCD-80 | 001281350 |  |  |
| 150 | 3.2.4 | 进行可用性评估 | 1d | 2005-11-29 | 2005-11-29 |  | 2005-11-29 | 2005-11-29 | 1d | 5d |  | UCD | 8h | UCD-90 |  |  |  |
| 151 | 2.21 | 产品数据准确性管理与齐套 | 1d | 2005-11-29 | 2005-11-29 |  | 2005-11-29 | 2005-11-29 | 1d | 5d |  | SE | 8h | RDPDT-66B | 001211590 | 001211590 |  |
| 152 | 2.22 | 企业标准，企业内控标准起草 | 1d | 2005-11-29 | 2005-11-29 |  | 2005-11-29 | 2005-11-29 | 1d | 5d |  | SE | 8h | SE-156 | 001211560 | 001211560 |  |
| 153 | 3.2.7 | 资料写作 | 1d | 2005-11-29 | 2005-11-29 |  |  |  |  | 5d |  |  |  |  |  |  |  |
| 154 | 2.41 | 集成配置器开工会 | 1d | 2005-11-29 | 2005-11-29 |  | 2005-11-29 | 2005-11-29 | 1d | 4d | 0d | SE | 8h | SE-163 | 001211630 | 001211630 |  |
| 155 | 2.42 | 制定集成配置器计划 | 1d | 2005-11-30 | 2005-11-30 | 154 | 2005-11-30 | 2005-11-30 | 1d | 4d |  | SE | 8h | SE-163A | 001211631 | 001211631 |  |
| 156 | 2.47 | 开发产品配置手册 | 1d | 2005-11-29 | 2005-11-29 |  | 2005-11-29 | 2005-11-29 | 1d | 5d |  | SE | 8h | SE-164 | 001211640 | 001211640 | 产品配置手册 |
| 157 | 2.56 | 开发集成配置器 | 1d | 2005-11-29 | 2005-11-29 |  | 2005-11-29 | 2005-11-29 | 1d | 5d |  | SE | 8h | SE-163B | 001211632 | 001211632 |  |
| 158 | 3.3 | **软件开发** | 1d | 2005-11-29 | 2005-11-29 |  | 2001-03-20 | 2001-03-20 | 1d | 5d |  |  |  |  |  |  |  |
| 159 | 3.3.1 | **软件开发组1** | 1d | 2005-11-29 | 2005-11-29 |  | 2005-11-29 | 2005-11-29 | 1d | 5d |  |  |  |  |  |  |  |
| 160 | 3.3.1.1 | 概要设计 | 1d | 2005-11-29 | 2005-11-29 |  | 2005-11-29 | 2005-11-29 | 1d | 5d |  |  |  |  |  |  |  |
| 161 | 3.3.1.2 | 详细设计 | 1d | 2005-11-29 | 2005-11-29 |  | 2005-11-29 | 2005-11-29 | 1d | 5d |  |  |  |  |  |  |  |
| 162 | 3.3.1.3 | 编码 | 1d | 2005-11-29 | 2005-11-29 |  | 2005-11-29 | 2005-11-29 | 1d | 5d |  |  |  |  |  |  |  |
| 163 | 3.3.1.4 | 单元测试 | 1d | 2005-11-29 | 2005-11-29 |  | 2005-11-29 | 2005-11-29 | 1d | 5d |  |  |  |  |  |  |  |
| 164 | 3.3.1.5 | 集成测试 | 1d | 2005-11-29 | 2005-11-29 |  | 2005-11-29 | 2005-11-29 | 1d | 5d |  |  |  |  |  |  |  |
| 165 | 3.3.1.6 | 系统测试 | 1d | 2005-11-29 | 2005-11-29 |  | 2005-11-29 | 2005-11-29 | 1d | 5d |  |  |  |  |  |  |  |
| 166 | 3.3.1.7 | 交付软件产品 | 1d | 2005-11-29 | 2005-11-29 |  | 2005-11-29 | 2005-11-29 | 1d | 5d |  |  |  |  |  |  |  |
| 167 | 3.3.2 | **软件开发组N** | 1d | 2005-11-29 | 2005-11-29 |  | 2005-11-29 | 2005-11-29 | 1d | 5d |  |  |  |  |  |  |  |
| 168 | 3.3.2.1 | 概要设计 | 1d | 2005-11-29 | 2005-11-29 |  | 2005-11-29 | 2005-11-29 | 1d | 5d |  |  |  |  |  |  |  |
| 169 | 3.3.2.2 | 详细设计 | 1d | 2005-11-29 | 2005-11-29 |  | 2005-11-29 | 2005-11-29 | 1d | 5d |  |  |  |  |  |  |  |
| 170 | 3.3.2.3 | 编码 | 1d | 2005-11-29 | 2005-11-29 |  | 2005-11-29 | 2005-11-29 | 1d | 5d |  |  |  |  |  |  |  |
| 171 | 3.3.2.4 | 单元测试 | 1d | 2005-11-29 | 2005-11-29 |  | 2005-11-29 | 2005-11-29 | 1d | 5d |  |  |  |  |  |  |  |
| 172 | 3.3.2.5 | 集成测试 | 1d | 2005-11-29 | 2005-11-29 |  | 2005-11-29 | 2005-11-29 | 1d | 5d |  |  |  |  |  |  |  |
| 173 | 3.3.2.6 | 系统测试 | 1d | 2005-11-29 | 2005-11-29 |  | 2005-11-29 | 2005-11-29 | 1d | 5d |  |  |  |  |  |  |  |
| 174 | 3.3.2.7 | 交付软件产品 | 1d | 2005-11-29 | 2005-11-29 |  | 2005-11-29 | 2005-11-29 | 1d | 5d |  |  |  |  |  |  |  |

| ID | WBS | Task | Duration | Start | Finish | Baseline start | Baseline finish | Baseline duration | Total slack |
| --- | --- | --- | --- | --- | --- | --- | --- | --- | --- |
| 175 | 3.4 | **硬件开发** | 1d | 2005-11-29 | 2005-11-29 | 2001-03-20 | 2001-03-20 | 1d | 5d |
| 176 | 3.4.1 | **硬件开发组1** | 1d | 2005-11-29 | 2005-11-29 | 2005-11-29 | 2005-11-29 | 1d | 5d |
| 177 | 3.4.1.1 | 单板1详细设计 | 1d | 2005-11-29 | 2005-11-29 | 2001-03-20 | 2001-03-20 | 1d | 5d |
| 178 | 3.4.1.2 | 单板1PCB设计 | 1d | 2005-11-29 | 2005-11-29 | 2001-03-20 | 2001-03-20 | 1d | 5d |
| 179 | 3.4.1.3 | 调试单板1调试和单元测试 | 1d | 2005-11-29 | 2005-11-29 | 2005-11-29 | 2005-11-29 | 1d | 5d |
| 180 | 3.4.1.4 | 单板N详细设计 | 1d | 2005-11-29 | 2005-11-29 | 2001-03-20 | 2001-03-20 | 1d | 5d |
| 181 | 3.4.1.5 | 单板N PCB设计 | 1d | 2005-11-29 | 2005-11-29 | 2001-03-20 | 2001-03-20 | 1d | 5d |
| 182 | 3.4.1.6 | 调试单板N调试和单元测试 | 1d | 2005-11-29 | 2005-11-29 | 2005-11-29 | 2005-11-29 | 1d | 5d |
| 183 | 3.4.1.7 | 硬件交付 | 1d | 2005-11-29 | 2005-11-29 | 2005-11-29 | 2005-11-29 | 1d | 5d |
| 184 | 3.4.2 | **硬件开发组N** | 1d | 2005-11-29 | 2005-11-29 | 2005-11-29 | 2005-11-29 | 1d | 5d |
| 185 | 3.4.2.1 | 单板1详细设计 | 1d | 2005-11-29 | 2005-11-29 | 2001-03-20 | 2001-03-20 | 1d | 5d |
| 186 | 3.4.2.2 | 单板1PCB设计 | 1d | 2005-11-29 | 2005-11-29 | 2001-03-20 | 2001-03-20 | 1d | 5d |
| 187 | 3.4.2.3 | 调试单板1调试和单元测试 | 1d | 2005-11-29 | 2005-11-29 | 2005-11-29 | 2005-11-29 | 1d | 5d |
| 188 | 3.4.2.4 | 单板N详细设计 | 1d | 2005-11-29 | 2005-11-29 | 2001-03-20 | 2001-03-20 | 1d | 5d |
| 189 | 3.4.2.5 | 单板N PCB设计 | 1d | 2005-11-29 | 2005-11-29 | 2001-03-20 | 2001-03-20 | 1d | 5d |
| 190 | 3.4.2.6 | 调试单板N调试和单元测试 | 1d | 2005-11-29 | 2005-11-29 | 2005-11-29 | 2005-11-29 | 1d | 5d |
| 191 | 3.4.2.7 | 硬件交付 | 1d | 2005-11-29 | 2005-11-29 | 2005-11-29 | 2005-11-29 | 1d | 5d |
| 192 | 3.5 | **逻辑开发** | 1d | 2005-11-29 | 2005-11-29 | 2001-03-20 | 2001-03-20 | 1d | 5d |
| 193 | 3.5.1 | **逻辑开发组1** | 1d | 2005-11-29 | 2005-11-29 | 2005-11-29 | 2005-11-29 | 1d | 5d |
| 194 | 3.5.1.1 | 逻辑概要设计 | 1d | 2005-11-29 | 2005-11-29 | 2001-03-20 | 2001-03-20 | 1d | 5d |
| 195 | 3.5.1.2 | 逻辑详细设计 | 1d | 2005-11-29 | 2005-11-29 | 2005-11-29 | 2005-11-29 | 1d | 5d |
| 196 | 3.5.1.3 | 编码 | 1d | 2005-11-29 | 2005-11-29 | 2005-11-29 | 2005-11-29 | 1d | 5d |
| 197 | 3.5.1.4 | 逻辑MUT/MIT/MST | 1d | 2005-11-29 | 2005-11-29 | 2005-11-29 | 2005-11-29 | 1d | 5d |
| 198 | 3.5.1.5 | 逻辑交付 | 1d | 2005-11-29 | 2005-11-29 | 2001-03-20 | 2001-03-20 | 1d | 5d |

| ID | WBS | Task | Duration | Start | Finish | Predecessors | Baseline start | Baseline finish | Baseline duration | Total slack | Free slack | Resources | Work | 输出 | 活动号 | 活动编码 | Text30 |
| --- | --- | --- | --- | --- | --- | --- | --- | --- | --- | --- | --- | --- | --- | --- | --- | --- | --- |
| 199 | 3.5.2 | **逻辑开发组2** | 1d | 2005-11-29 | 2005-11-29 |  | 2005-11-29 | 2005-11-29 | 1d | 5d |  |  |  |  |  |  |  |
| 200 | 3.5.2.1 | 逻辑概要设计 | 1d | 2005-11-29 | 2005-11-29 |  | 2001-03-20 | 2001-03-20 | 1d | 5d |  |  |  |  |  |  |  |
| 201 | 3.5.2.2 | 逻辑详细设计 | 1d | 2005-11-29 | 2005-11-29 |  | 2005-11-29 | 2005-11-29 | 1d | 5d |  |  |  |  |  |  |  |
| 202 | 3.5.2.3 | 编码 | 1d | 2005-11-29 | 2005-11-29 |  | 2005-11-29 | 2005-11-29 | 1d | 5d |  |  |  |  |  |  |  |
| 203 | 3.5.2.4 | 逻辑MUT/MIT/MST | 1d | 2005-11-29 | 2005-11-29 |  | 2005-11-29 | 2005-11-29 | 1d | 5d |  |  |  |  |  |  |  |
| 204 | 3.5.2.5 | 逻辑交付 | 1d | 2005-11-29 | 2005-11-29 |  | 2001-03-20 | 2001-03-20 | 1d | 5d |  |  |  |  |  |  |  |
| 205 | 3.6 | **整机开发** | 1d | 2005-11-29 | 2005-11-29 |  | 2001-03-20 | 2001-03-20 | 1d | 5d |  |  |  |  |  |  |  |
| 206 | 3.6.1 | 结构/电缆详细设计 | 1d | 2005-11-29 | 2005-11-29 |  | 2001-03-20 | 2001-03-20 | 1d | 5d |  |  |  |  |  |  |  |
| 207 | 3.6.2 | 试装以及单元测试 | 1d | 2005-11-29 | 2005-11-29 |  | 2005-11-29 | 2005-11-29 | 1d | 5d |  |  |  |  |  |  |  |
| 208 | 3.6.3 | 整机交付 | 1d | 2005-11-29 | 2005-11-29 |  | 2005-11-29 | 2005-11-29 | 1d | 5d |  |  |  |  |  |  |  |
| 209 | 3.7 | **资料开发** | 1d | 2005-11-29 | 2005-11-29 |  | 2001-03-20 | 2001-03-20 | 1d | 5d |  |  |  |  |  |  |  |
| 210 | 3.7.1 | 资料写作 | 1d | 2005-11-29 | 2005-11-29 |  | 2005-11-29 | 2005-11-29 | 1d | 5d |  |  |  | 资料内容模块 |  |  |  |
| 211 | 3.7.2 | 评审 | 1d | 2005-11-29 | 2005-11-29 |  | 2005-11-29 | 2005-11-29 | 1d | 5d |  |  |  |  |  |  |  |
| 212 | 3.7.3 | 技术编辑 | 1d | 2005-11-29 | 2005-11-29 |  | 2005-11-29 | 2005-11-29 | 1d | 5d |  |  |  |  |  |  |  |
| 213 | 3.7.4 | 提交翻译 | 1d | 2005-11-29 | 2005-11-29 |  |  |  |  | 5d |  |  |  |  |  |  |  |
| 214 | 3.7.5 | 翻译验收 | 1d | 2005-11-29 | 2005-11-29 |  | 2001-03-20 | 2001-03-20 | 1d | 5d |  |  |  | 翻译后的资料内容模块 |  |  |  |
| 215 | 3.7.6 | 信息模块集成 | 1d | 2005-11-29 | 2005-11-29 |  |  |  |  | 5d |  |  |  |  |  |  |  |
| 216 | 3.8 | **BBIT** | 2d | 2005-11-29 | 2005-11-30 |  | 2005-11-29 | 2005-12-02 | 4d | 3d | 0d |  | 8h |  | RDPDT-67 |  |  |
| 217 | 3.8.1 | 执行BBIT | 1d | 2005-11-29 | 2005-11-29 |  | 2005-11-29 | 2005-11-29 | 1d | 3d | 0d | RDPDT | 8h |  |  |  |  |
| 218 | 3.8.2 | 批准BBIT测试报告 | 1d | 2005-11-30 | 2005-11-30 | 217 | 2005-11-30 | 2005-11-30 | 1d | 3d |  |  |  |  |  |  |  |
| 219 | 3.9 | **产品测试** | 1d | 2005-11-29 | 2005-11-29 |  | 2005-11-29 | 2005-11-29 | 1d | 4d |  |  | 8h |  |  |  |  |
| 220 | 3.2.36 | 验证产品配置包 | 1d | 2005-11-29 | 2005-11-29 |  | 2005-11-29 | 2005-11-29 | 1d | 5d |  | TE | 8h |  | TE-65 | 001220650 | 001220650 |
| 221 | 3.9.2 | 制定SDV策略 | 1d | 2005-11-29 | 2005-11-29 |  | 2005-11-29 | 2005-11-29 | 1d | 5d |  |  |  |  |  |  |  |
| 222 | 3.9.3 | 执行SDV测试 | 1d | 2005-11-29 | 2005-11-29 |  | 2005-11-29 | 2005-11-29 | 1d | 4d | 0d |  |  |  |  |  |  |
| 223 | 3.9.4 | 制定SIT策略 | 1d | 2005-11-29 | 2005-11-29 |  | 2005-11-29 | 2005-11-29 | 1d | 5d |  |  |  |  |  |  |  |
| 224 | 3.9.5 | 执行SIT测试 | 1d | 2005-11-29 | 2005-11-29 |  | 2005-11-29 | 2005-11-29 | 1d | 4d | 0d |  |  |  |  |  |  |
| 225 | 3.9.6 | 制定SVT策略 | 1d | 2005-11-29 | 2005-11-29 |  | 2005-11-29 | 2005-11-29 | 1d | 5d |  |  |  |  |  |  |  |
| 226 | 3.9.7 | 开发测试用例 | 1d | 2005-11-29 | 2005-11-29 |  | 2005-11-29 | 2005-11-29 | 1d | 5d |  |  |  |  |  |  |  |
| 227 | 3.9.8 | 转测试评估 | 1d | 2005-11-29 | 2005-11-29 |  | 2005-11-29 | 2005-11-29 | 1d | 5d |  |  |  |  |  |  |  |
| 228 | 3.10 | 技术评审4 | 1d | 2005-12-01 | 2005-12-01 | 216 | 2001-03-20 | 2001-03-20 | 1d | 3d |  | PDT核心团队; LPDT; PQA | 24h |  | SE-160 | 001211600 |  |
| 229 | 3.11 | 技术评审4A | 1d | 2005-11-30 | 2005-11-30 | 222 | 2001-03-20 | 2001-03-20 | 1d | 4d |  | PDT核心团队; LPDT; PQA | 24h |  | SE-165 | 001211650 |  |
| 230 | 3.12 | 技术评审5 | 1d | 2005-11-30 | 2005-11-30 | 224 | 2001-03-20 | 2001-03-20 | 1d | 4d |  | PDT核心团队; LPDT; PQA | 24h |  | SE-230 | 001212300 |  |

| ID | WBS | Task | Duration | Start | Finish | Predecessors | Baseline start | Baseline finish | Baseline duration | Total slack | Free slack | Resources | Work | 活动编码 | 输出 | 活动号 | Text30 |
| --- | --- | --- | --- | --- | --- | --- | --- | --- | --- | --- | --- | --- | --- | --- | --- | --- | --- |
| 231 | 4 | **IPD验证阶段研发领域WBS 3、4级计划** | 5d | 2005-11-29 | 2005-12-05 |  | 2000-05-22 | 2000-05-22 | 1d | 1d |  |  | 96h |  |  |  |  |
| 232 | 4.1 | **研发管理** | 4d | 2005-11-29 | 2005-12-02 |  | 2005-11-29 | 2005-11-29 | 1d | 1d |  |  | 40h |  |  |  |  |
| 233 | 4.1.1 | 器件失效分析 | 1d | 2005-11-29 | 2005-11-29 |  | 2005-11-29 | 2005-11-29 | 1d | 5d |  | PQA; PDT核心团队 | 16h | 001201560 |  |  |  |
| 234 | 4.1.2 | 度量分析 | 2d | 2005-11-29 | 2005-11-30 |  | 2005-11-29 | 2005-11-29 | 1d | 4d |  | MC | 16h | 001201570 | 《度量分析报告》 |  |  |
| 235 | 4.1.3 | 提供最终产品配置给订单履行 | 1d | 2005-12-02 | 2005-12-02 |  | 2000-05-22 | 2000-05-22 | 1d | 2d |  | 产品CMO | 8h | 001201580 |  | RDPDT-69 |  |
| 236 | 4.1.4 | 发布准备评估 | 1d | 2005-11-29 | 2005-11-29 |  | 2000-05-22 | 2000-05-22 | 1d | 1d | 0d |  |  | 001201590 |  | RDPDT-70 |  |
| 237 | 4.1.5 | 准备可获得性决策评审材料 | 1d | 2005-11-29 | 2005-11-29 |  | 2005-11-29 | 2005-11-29 | 1d | 5d |  |  |  | 001101100 |  | RDPDT-80 |  |
| 238 | 4.2 | **系统开发** | 3d | 2005-11-29 | 2005-12-01 |  | 2005-11-29 | 2005-11-29 | 1d | 3d |  |  | 48h |  |  |  |  |
| 239 | 3.1 | 更新BOM并将最新版本发布给制造 | 3d | 2005-11-29 | 2005-12-01 |  | 2005-11-29 | 2005-12-01 | 3d | 3d |  | SE | 24h | 001212350 |  | SE-235 | 001212350 |
| 240 | 3.20 | 发布集成配置器就绪公告 | 2d | 2005-11-29 | 2005-11-30 |  | 2005-11-29 | 2005-11-30 | 2d | 4d |  | SE | 16h | 001212600 |  | SE-260 | 001212600 |
| 241 | 4.2.3 | ESP发货的UCD调查 | 1d | 2005-11-29 | 2005-11-29 |  | 2005-11-29 | 2005-11-29 | 1d | 5d |  | UCD | 8h |  |  | UCD-100 |  |
| 242 | 4.3 | **产品测试** | 1d | 2005-11-29 | 2005-11-29 |  | 2005-11-29 | 2005-11-29 | 1d | 5d |  |  |  |  |  |  |  |
| 243 | 4.3.1 | 执行SVT测试 | 1d | 2005-11-29 | 2005-11-29 |  | 2005-11-29 | 2005-11-29 | 1d | 5d |  |  |  |  |  |  |  |
| 244 | 4.3.2 | 执行SVT2测试 | 1d | 2005-11-29 | 2005-11-29 |  | 2005-11-29 | 2005-11-29 | 1d | 5d |  |  |  |  |  |  |  |
| 245 | 4.3.3 | 执行Beta1测试 | 1d | 2005-11-29 | 2005-11-29 |  | 2001-03-20 | 2001-03-20 | 1d | 5d |  |  |  |  |  |  |  |
| 246 | 4.3.4 | 执行BetaN测试 | 1d | 2005-11-29 | 2005-11-29 |  | 2005-11-29 | 2005-11-29 | 1d | 5d |  |  |  |  |  |  |  |
| 247 | 4.3.5 | 执行认证和标杆测试 | 1d | 2005-11-29 | 2005-11-29 |  | 2001-03-20 | 2001-03-20 | 1d | 5d |  |  |  |  |  |  |  |
| 248 | 4.3.6 | 进行缺陷分析 | 1d | 2005-11-29 | 2005-11-29 |  | 2005-11-29 | 2005-11-29 | 1d | 5d |  |  |  |  |  |  |  |
| 249 | 4.3.7 | 制定试验局计划 | 1d | 2005-11-29 | 2005-11-29 |  | 2005-11-29 | 2005-11-29 | 1d | 5d |  |  |  |  |  |  |  |
| 250 | 4.3.8 | 开局 | 1d | 2005-11-29 | 2005-11-29 |  | 2005-11-29 | 2005-11-29 | 1d | 5d |  |  |  |  |  |  |  |
| 251 | 4.4 | 技术评审6 | 0.33d | 2005-11-29 | 2005-11-29 |  | 2005-11-29 | 2005-11-29 | 1d | 5.67d |  | PDT核心团队; LPDT; PQA | 8h | 001212700 |  | SE-270 |  |
| 252 | 4.5 | 可获得性决策评审点 | 1d | 2005-12-05 | 2005-12-05 | 236 | 2000-05-22 | 2000-05-22 | 1d | 1d |  |  |  | 001000600 |  | IPMT-60 |  |
| 253 | 5 | **IPD发布阶段研发领域WBS 3、4级计划** | 6d | 2005-11-29 | 2005-12-06 |  | 2001-03-20 | 2001-03-20 | 1d | 0d |  |  | 32h |  |  |  |  |
| 254 | 5.1 | **研发管理** | 6d | 2005-11-29 | 2005-12-06 |  | 2005-11-29 | 2005-11-29 | 1d | 0d |  |  | 24h |  |  |  |  |
| 255 | 5.1.1 | 技术资料出版、发送和储存 | 1d | 2005-11-29 | 2005-11-29 |  | 2001-03-20 | 2001-03-20 | 1d | 5d |  | TD | 8h | 001201610 |  | TD-70 |  |
| 256 | 5.1.2 | 提供开发成本数据以支持内部发布发布价格 | 1d | 2005-12-06 | 2005-12-06 |  | 2001-03-20 | 2001-03-20 | 1d | 0d |  | RDPDT | 8h | 001201620 |  | RDPDT-100 |  |
| 257 | 5.1.3 | 执行GA活动 | 1d | 2005-11-29 | 2005-11-29 |  | 2001-03-20 | 2001-03-20 | 1d | 5d |  | MKTPDT | 8h | 001201630 |  |  |  |

| ID | WBS | Task | Duration | Start | Finish | Baseline start | Baseline finish | Baseline duration | Total slack | Resources | Work | 活动号 |
| --- | --- | --- | --- | --- | --- | --- | --- | --- | --- | --- | --- | --- |
| 258 | 5.2 | **系统开发** | 1d | 2005-11-29 | 2005-11-29 | 2005-11-29 | 2005-11-29 | 1d | 5d |  | 8h |  |
| 259 | 5.2.1 | 继续ESP发货的UCD调查 | 1d | 2005-11-29 | 2005-11-29 | 2005-11-29 | 2005-11-29 | 1d | 5d | UCD | 8h | UCD-110 |
