# SAMPLE

Schedule from MS Project, 2006-01-12 to 2006-04-21.
huawei

## Calendars

- 标准: Mon-Fri 08:00-12:00, 13:00-17:00; Sat-Sun off.

## Resources

| Resource |
| --- |
| IPMT |
| LPDT |
| FPDT |
| RDPDT |
| TSPDT |
| MNFPDT |
| PROPDT |
| MKTPDT |
| POP |
| SE |
| UCD |
| PDPDT |
| EE |
| SWE |
| ME |
| IDE |
| TE |
| RME |
| TSS |
| AME |
| BP |
| PRO |
| PQA |
| TD |
| IMC |
| FF |
| MSE |
| PP |
| MOPS |
| 评审专家 |
| RDTPDT |
| TD（新增） |

## Schedule

| ID | WBS | Task | Duration | Start | Finish | Predecessors | Total slack | Free slack | Constraint | Resources | Work | 活动编码 | Text30 | 输出 | Text12 |
| --- | --- | --- | --- | --- | --- | --- | --- | --- | --- | --- | --- | --- | --- | --- | --- |
| 1 | 0 | **IPD概念阶段E2E WBS 1、2级计划** | 72d | 2006-01-12 | 2006-04-21 |  | 0d |  |  |  | 2711.98h |  |  |  |  |
| 2 | 1.1 | **LPDT管理** | 41d | 2006-02-24 | 2006-04-21 |  | 0d |  |  |  | 792h |  |  |  |  |
| 3 | 1 | 组建PDT核心组/确定必要的外围组成员 | 1d | 2006-02-24 | 2006-02-24 |  | 0d |  | start no earlier than 2006-02-24 | IPMT | 8h | 001000100 | 001000100 |  |  |
| 4 | 2 | 接受项目任务书 | 1d | 2006-02-27 | 2006-02-27 | 3 | 0d |  |  | LPDT | 8h | 001100030 | 001100030 |  |  |
| 5 | 5 | 团队培训 | 2d | 2006-02-28 | 2006-03-01 | 4 | 21d | 0d |  | LPDT | 16h | 001100040 | 001100040 |  |  |
| 6 | 6 | 项目开工会 | 1d | 2006-03-02 | 2006-03-02 | 5, 62 | 21d | 0d |  | LPDT | 8h | 001100080 | 001100080 |  |  |
| 7 | 7 | 制定并分发沟通计划 | 1d | 2006-03-03 | 2006-03-03 | 6 | 21d | 0d |  | LPDT | 8h | 001100130 | 001100130 | 沟通计划 | 沟通计划 |
| 8 | 8 | 制定概念阶段详细项目计划(WBS L1/2/3/4) | 5d | 2006-03-06 | 2006-03-10 | 7 | 21d | 0d |  | LPDT; FPDT; RDPDT; TSPDT; MNFPDT; PROPDT; MKTPDT; POP | 320h | 001100200 | 001100200 | 概念阶段E2E WBS 1/2级计划与各功能领域概念阶段WBS1/2/3/4级计划 | 概念阶段E2E WBS 1/2级计划与各功能领域概念阶段WBS1/2/3/4级计划 |
| 9 | 31 | 制定对外合作策略 | 2d | 2006-04-06 | 2006-04-07 | 64 | 10d |  |  | LPDT | 16h | 001100210 | 001100210 | 对外合作策略 | 对外合作策略 |
| 10 | 32 | 制定总体风险评估和识别依赖关系 | 5d | 2006-04-06 | 2006-04-12 | 64 | 1d |  |  | LPDT | 40h | 001100250 | 001100250 | 依赖关系清单 | 依赖关系清单 |
| 11 | 33 | 制定信息安全计划 | 5d | 2006-04-06 | 2006-04-12 | 64 | 1d |  |  | LPDT | 40h | 001100270 | 001100270 | 信息安全计划 | 信息安全计划 |
| 12 | 43 | 组织制定产品包/解决方案商业计划和端到端项目计划（WBS1/2） | 5d | 2006-04-11 | 2006-04-17 | 11FS-3d, 10FS-3d, 54FS-3d, 29FS-3d, 48FS-3d, 50FS-3d, 58FS-3d, 46FS-3d, 51FS-3d, 45FS-3d | 0d |  |  | LPDT; MKTPDT; PROPDT; MNFPDT; TSPDT; RDPDT; FPDT | 280h | 001100300 | 001100300 | 项目人力需求预测、产品包与解决方案商业计划、E2E WBS 1/2级计划 | 项目人力需求预测、产品包与解决方案业务计划、E2E WBS 1/2级计划 |
| 13 | 44 | 与IPMT沟通 | 5d | 2006-04-13 | 2006-04-19 | 12FS-3d | 0d |  |  | LPDT | 40h | 001100400 | 001100400 |  |  |
| 14 | 46.1 | 项目经验教训总结 | 1d | 2006-04-21 | 2006-04-21 | 65 | 0d |  |  | LPDT | 8h | 001100420 | 001100420 | 概念阶段结束经验教训总结 | 概念阶段结束经验教训总结 |
| 15 | 1.2 | **研发** | 34d | 2006-02-27 | 2006-04-13 |  | 6d |  |  |  | 832h |  |  |  |  |
| 16 | 3 | 确定是否需要UCD | 1d | 2006-02-27 | 2006-02-27 | 3 | 36d | 0d |  | UCD | 8h | 001280100 | 001280100 |  |  |
| 17 | 1.2.2 | 制定UCD目标和计划 | 3d | 2006-02-28 | 2006-03-02 | 16 | 36d |  |  | UCD | 24h | 001280150 | 001280150 | UCD计划 | UCD计划 |
| 18 | 17.1 | 进行知识产权/智力资产分析和评估各种技术方案 | 7d | 2006-03-15 | 2006-03-23 | 33 | 21d |  |  | SE; RDPDT | 112h | 001200300 | 001200300 | 知识产权计划概要、智力资产计划概要、共用软件和硬件使用计划概要 | 知识产权计划概要、智力资产计划概要、共用软件和硬件使用计划概要 |
| 19 | 17.2 | 探索可选概念和提供技术可选方案 | 7d | 2006-03-15 | 2006-03-23 | 33 | 0d |  |  | EE; SWE; ME; IDE; TE | 280h |  |  |  |  |
| 20 | 1.2.4 | 探索和评估备选用户概念 | 5d | 2006-03-15 | 2006-03-21 | 33 | 21d | 0d |  | UCD | 40h | 001280300 | 001280300 |  |  |
| 21 | 18 | 产生和评估产品包概念并选择一个概念 | 3d | 2006-03-24 | 2006-03-28 | 19 | 0d |  |  | TE; IDE; ME; SWE; EE; SE; RDPDT | 168h | 001200350 | 001200350 |  |  |
| 22 | 19 | 选择用户概念 | 2d | 2006-03-22 | 2006-03-23 | 20 | 21d |  |  | UCD | 16h | 001280400 | 001280400 |  |  |
| 23 | 21 | 制定标准策略 | 5d | 2006-03-29 | 2006-04-04 | 21 | 13d |  |  | SE | 40h | 001210090 | 001210090 | 产品标准策略 | 产品标准策略 |
| 24 | 23 | 确定产品包概念和设计需求 | 5d | 2006-03-29 | 2006-04-04 | 21 | 0d |  |  | SE | 40h | 001210100 | 001210100 | 产品备选概念、设计需求 | 产品备选概念、设计需求 |
| 25 | 29 | 将设计需求纳入正式变更控制 | 1d | 2006-04-06 | 2006-04-06 | 64 | 10d | 0d |  | SE | 8h | 001210300 | 001210300 |  |  |
| 26 | 26 | 创建早期BOM（开发过程中更新）提供新器件规格 | 3d | 2006-04-06 | 2006-04-10 | 64 | 6d | 0d |  | SE | 24h | 001210350 | 001210350 |  |  |
| 27 | 30 | 管理设计需求变更 | 1d | 2006-04-07 | 2006-04-07 | 25 | 10d |  |  | SE | 8h | 001210400 | 001210400 |  |  |
| 28 | 35 | 制定初始EC计划 | 3d | 2006-04-11 | 2006-04-13 | 26 | 6d |  |  | SE | 24h | 001210450 | 001210450 |  |  |
| 29 | 36 | 准备开发和验证计划 | 5d | 2006-04-06 | 2006-04-12 | 64 | 1d |  |  | RDPDT | 40h | 001200400 | 001200400 | 产品包开发主计划、产品包验证主计划、UCD计划 | 产品包开发主计划、产品包验证主计划、UCD计划 |

Notes:
- 3: 活动号: IPMT-10
- 4: 活动号: LPDT-03
- 5: 活动号: LPDT-04
- 6: 活动号: LPDT-08
- 7: 活动号: LPDT-13
- 8: 活动号: LPDT-20,FPDT-20,RDPDT-20,TSPDT-20,MNFPDT-20,PROPDT-20,MKTPDT-20
- 9: 活动号: LPDT-21
- 10: 活动号: LPDT-25
- 11: 活动号: LPDT-27
- 12: 活动号: LPDT-30,FPDT-40,RDPDT-50,TSPDT-40,MNFPDT-40,PROPDT-40,MKTPDT-50
- 13: 活动号: LPDT-40
- 14: 活动号: LPDT-42
- 16: 活动号: UCD-10
- 17: 活动号: UCD-15
- 18: 活动号: RDPDT-30,SE-05
- 19: 活动号: EE-10, SWE-10, ME-10, IDE-10, TE-15
- 20: 活动号: UCD-30
- 21: 活动号: RDPDT-35,SE-07,EE-12, SWE-12,ME-12 ,IDE-27,TE-17
- 22: 活动号: UCD-40
- 23: 活动号: SE-09
- 24: 活动号: SE-10
- 25: 活动号: SE-30
- 26: 活动号: SE-35
- 27: 活动号: SE-40
- 28: 活动号: SE-45
- 29: 活动号: RDPDT-40

| ID | WBS | Task | Duration | Start | Finish | Predecessors | Total slack | Free slack | Resources | Work | 活动号 | 活动编码 | Text30 |
| --- | --- | --- | --- | --- | --- | --- | --- | --- | --- | --- | --- | --- | --- |
| 30 | 1.3 | **市场** | 66d | 2006-01-12 | 2006-04-13 |  | 6d |  |  | 608h |  |  |  |
| 31 | 13 | 向MKTPDT提供候选产品包需求 | 4d | 2006-02-28 | 2006-03-03 | 4 | 0d |  | RME | 32h | RME-10 | 001810100 | 001810100 |
| 32 | 14 | 向PDT提供备选产品包需求 | 2d | 2006-03-06 | 2006-03-07 | 31 | 0d |  | MKTPDT | 16h | MKTPDT-30 | 001800300 | 001800300 |
| 33 | 15 | **验证备选产品包需求** | 5d | 2006-03-08 | 2006-03-14 |  | 0d |  | MKTPDT | 400h | MKTPDT-35 | 001800350 | 001800350 |
| 34 | 15.1 | 参与验证备选产品包需求（包括RAS/EMC/防护/安全/环境/需求） | 5d | 2006-03-08 | 2006-03-14 | 32 | 0d |  | SE; TE; RDPDT | 120h | SE-03 | 001210030 | 001210030 |
| 35 | 15.2 | 参与验证备选产品包需求（包括可测试性需求） | 5d | 2006-03-08 | 2006-03-14 | 32 | 0d |  | TE | 40h | TE-10 | 001220100 | 001220100 |
| 36 | 15.3 | 参与验证备选产品包需求（包括可服务性需求） | 5d | 2006-03-08 | 2006-03-14 | 32 | 0d |  | TSS | 40h | TSS-10 | 001410100 | 001410100 |
| 37 | 15.4 | 参与验证备选产品包需求（包括可制造性需求） | 5d | 2006-03-08 | 2006-03-14 | 32 | 0d |  | AME | 40h | AME-15 | 001510150 | 001510150 |
| 38 | 15.5 | 参与验证备选产品包需求（包括UCD需求） | 5d | 2006-03-08 | 2006-03-14 | 32 | 0d |  | UCD | 40h | UCD-20 | 001280200 | 001280200 |
| 39 | 15.6 | 参与验证备选产品包需求 | 5d | 2006-03-08 | 2006-03-14 | 32 | 0d |  | RME | 40h | RME-20 | 001810200 | 001810200 |
| 40 | 15.7 | 验证其他需求 | 5d | 2006-03-08 | 2006-03-14 | 32 | 0d |  | SE | 40h |  |  |  |
| 41 | 22 | 确定产品包需求 | 5d | 2006-03-29 | 2006-04-04 | 21 | 0d |  | MKTPDT; RME | 80h | MKTPDT-36,RME-30 | 001800360 | 001800360 |
| 42 | 1.3.5 | 客户需求早期确认 | 1d | 2006-01-12 | 2006-01-12 |  | 71d |  | MKTPDT; RME | 16h | MKTPDT-38 |  |  |
| 43 | 27 | 产品包需求基线化 | 1d | 2006-04-06 | 2006-04-06 | 64 | 10d | 0d | RME | 8h | RME-40 | 001810400 | 001810400 |
| 44 | 28 | 监控和管理对产品包需求基线的更改 | 1d | 2006-04-07 | 2006-04-07 | 43 | 10d |  | RME | 8h | RME-50 | 001810500 | 001810500 |
| 45 | 41 | 制定和更新商业盈利计划 | 3d | 2006-04-06 | 2006-04-10 | 64 | 0d |  | BP | 24h | BP-10 | 001820100 | 001820100 |
| 46 | 42 | 制定和更新营销计划 | 3d | 2006-04-11 | 2006-04-13 | 45 | 0d |  | MKTPDT | 24h | MKTPDT-40 | 001800400 | 001800400 |
| 47 | 1.4 | **技术服务** | 5d | 2006-04-06 | 2006-04-12 |  | 1d |  |  | 39.98h |  |  |  |
| 48 | 37 | 制定客户服务策略 | 5d | 2006-04-06 | 2006-04-12 | 64 | 1d |  | TSPDT | 39.98h | TSPDT-30 | 001400300 | 001400300 |
| 49 | 1.5 | **制造** | 5d | 2006-04-06 | 2006-04-12 |  | 1d |  |  | 80h |  |  |  |
| 50 | 38 | 制定制造策略 | 5d | 2006-04-06 | 2006-04-12 | 64 | 1d |  | MNFPDT | 40h | MNFPDT-30 | 001500300 | 001500300 |
| 51 | 39 | 制定订单履行策略 | 5d | 2006-04-06 | 2006-04-12 | 64 | 1d |  | FF | 40h | FF-10 | 001540100 | 001540100 |
| 52 | 1.6 | **财务** | 23d | 2006-03-13 | 2006-04-12 |  | 7d |  |  | 80h |  |  |  |
| 53 | 11 | 根据备选概念初步分解目标成本 | 5d | 2006-03-13 | 2006-03-17 | 8 | 25d |  | FPDT | 40h | FPDT-27 | 001600270 | 001600270 |
| 54 | 34 | 实施初步的财务评估 | 5d | 2006-04-06 | 2006-04-12 | 64 | 1d |  | FPDT | 40h | FPDT-30 | 001600300 | 001600300 |

Notes:
- 32: 输出: 端到端产品包需求 / Text12: 端到端产品包需求
- 41: 输出: 端到端产品包需求 / Text12: 端到端产品包需求
- 46: 输出: 营销计划 / Text12: 营销计划
- 48: 输出: 客户服务与支持策略 / Text12: 客户服务与支持策略
- 50: 输出: 制造策略 / Text12: 制造策略
- 51: 输出: 客户订单履行策略 / Text12: 客户订单履行策略
- 54: 输出: 概念阶段销售收入预测、概念阶段产品成本估计、概念阶段功能性费用预测、概念阶段开发项目成本预测、概念阶段利润计算分析、概念阶段财务分析、概念阶段财务评估 / Text12: 概念阶段销售收入预测、概念阶段产品成本估计、概念阶段功能性费用预测、概念阶段开发项目成本预测、概念阶段利润计算分析、概念阶段财务分析、概念阶段财务评估

| ID | WBS | Task | Duration | Start | Finish | Predecessors | Total slack | Free slack | Constraint | Resources | Work | 活动编码 | Text30 | 输出 | Text12 |
| --- | --- | --- | --- | --- | --- | --- | --- | --- | --- | --- | --- | --- | --- | --- | --- |
| 55 | 1.7 | **采购** | 23d | 2006-03-13 | 2006-04-12 |  | 7d |  |  |  | 112h |  |  |  |  |
| 56 | 12 | 确定是否成立Sourcing team | 7d | 2006-03-13 | 2006-03-21 | 8 | 21d | 0d |  | PROPDT | 56h | 001700270 | 001700270 |  |  |
| 57 | 16 | 启动供应商认证流程 | 2d | 2006-03-22 | 2006-03-23 | 56 | 21d |  |  | PRO | 16h | 001710100 | 001710100 |  |  |
| 58 | 40 | 制定初始 Sourcing计划 | 5d | 2006-04-06 | 2006-04-12 | 64 | 1d |  |  | PROPDT | 40h | 001700300 | 001700300 | 初始Sourcing计划 | 初始Sourcing计划 |
| 59 | 1.8 | **PQA** | 5d | 2006-03-06 | 2006-03-10 |  | 30d |  |  |  | 40h |  |  |  |  |
| 60 | 9 | 制定产品质量目标和计划 | 5d | 2006-03-06 | 2006-03-10 | 7 | 30d |  |  | PQA | 40h | 001110100 | 001110100 | 产品质量计划 | 产品质量计划 |
| 61 | 1.9 | **POP** | 41d | 2006-02-24 | 2006-04-21 |  | 0d |  |  |  | 40h |  |  |  |  |
| 62 | 4 | 准备项目环境 | 2d | 2006-02-24 | 2006-02-27 | 4FS-2d | 23d | 2d |  | POP | 16h | 001120100 | 001120100 |  |  |
| 63 | 46.2 | 更新/关闭项目数据库 | 3d | 2006-04-19 | 2006-04-21 | 14FS-3d | 0d |  |  | POP | 24h | 001120150 | 001120150 |  |  |
| 64 | 15 | TR1 | 1d | 2006-04-05 | 2006-04-05 | 41, 24 | 0d |  |  | SE; PQA; PROPDT; RDPDT; TSPDT; FPDT; MKTPDT; MNFPDT; LPDT; 评审专家 | 80h |  |  |  |  |
| 65 | 16 | CDCP | 1d | 2006-04-20 | 2006-04-20 | 13 | 0d |  | finish no earlier than 2006-04-20 | IPMT | 8h | 001000200 | 001000200 |  |  |
| 66 | 1 | **IPD计划阶段E2E WBS 1、2级计划** | 23.62d? | 2006-01-12 | 2006-02-14 |  | 20.1d |  |  |  | 760h |  |  |  |  |
| 67 | 2.1 | **LPDT管理** | 22.62d | 2006-01-12 | 2006-02-13 |  | 20.1d |  |  |  | 144h |  |  |  |  |
| 68 | 1.1 | 扩展PDT | 1d | 2006-01-12 | 2006-01-12 |  | 20.1d | 0d |  | IPMT | 8h | 001000300 | 001000300 |  |  |
| 69 | 1.3 | 团队培训 | 1d | 2006-01-13 | 2006-01-13 | 68 | 20.1d | 0d |  | LPDT | 8h | 001100460 | 001100460 |  |  |
| 70 | 1.4 | 项目开工会 | 1d | 2006-01-16 | 2006-01-16 | 69, 135 | 20.1d | 0d |  | LPDT | 8h | 001100500 | 001100500 |  |  |
| 71 | 1.5 | 制定计划阶段项目计划(WBS L1/2/3/L4) | 1d | 2006-01-17 | 2006-01-17 | 70 | 20.1d | 0d |  | LPDT [700%] | 56h | 001100550 | 001100550 | 计划阶段E2E WBS 1/2级计划与各功能领域计划阶段WBS1/2/3/4级计划 | 计划阶段E2E WBS 1/2级计划与各功能领域计划阶段WBS1/2/3/4级计划 |
| 72 | 1.47 | 优化信息安全计划 | 1d | 2006-02-02 | 2006-02-03 | 138 | 21.1d | 1d |  | LPDT | 8h | 001100591 | 001100591 |  |  |
| 73 | 1.48 | 制定生命周期策略和计划 | 1d | 2006-02-02 | 2006-02-03 | 138 | 21.1d | 1d |  | LPDT | 8h | 001100592 | 001100592 |  |  |
| 74 | 1.49 | 制定对外合作计划 | 1d | 2006-02-02 | 2006-02-03 | 138 | 21.1d | 1d |  | LPDT | 8h | 001100580 | 001100580 |  |  |
| 75 | 1.50 | 优化总体风险评估和刷新依赖关系清单 | 1d | 2006-02-02 | 2006-02-03 | 138 | 21.1d | 1d |  | LPDT | 8h | 001100590 | 001100590 | 刷新后的依赖关系清单 | 刷新后的依赖关系清单 |
| 76 | 1.59 | 优化商业计划和端到端项目计划(WBS1/2) | 1d | 2006-02-06 | 2006-02-07 | 72, 73, 74, 75, 125, 126, 114, 110, 117, 129, 133, 101 | 20.1d | 0d |  | LPDT [14.3%]; FPDT [14.3%]; RDTPDT [14.3%]; TSPDT [14.3%]; PROPDT [14.3%]; MNFPDT [14.3%]; MKTPDT [14.3%] | 8h | 001100600 | 001100600 | 端到端WEB 1/2级计划及各功能领域计划 | 端到端WEB 1/2级计划及各功能领域计划 |
| 77 | 1.60 | 拟制合同书 | 1d | 2006-02-07 | 2006-02-08 | 76 | 20.1d | 0d |  | LPDT | 8h | 001100700 | 001100700 | 计划决策评审点合同书、依赖关系承诺书 | 计划决策评审点合同书、依赖关系承诺书 |
| 78 | 1.61 | 与IPMT沟通 | 1d | 2006-02-08 | 2006-02-09 | 77 | 20.1d | 0d |  | LPDT | 8h | 001100800 | 001100800 |  |  |
| 79 | 1.63.1 | 经验教训总结 | 1d | 2006-02-10 | 2006-02-13 | 139 | 48.38d | 0d |  | LPDT | 8h | 001100820 | 001100820 |  |  |

Notes:
- 56: 活动号: PROPDT-27
- 57: 活动号: PRO-10
- 58: 活动号: PROPDT-30
- 60: 活动号: PQA-10
- 62: 活动号: POP-10
- 63: 活动号: POP-15
- 65: 活动号: IPMT-20
- 68: 活动号: IPMT-30
- 69: 活动号: LPDT-46
- 70: 活动号: LPDT-50
- 71: 活动号: LPDT-55,FPDT-45,RDPDT-55,TSPDT-45,MNFPDT-45,PROPDT-45,MKTPDT-45
- 72: 活动号: LPDT-59A
- 73: 活动号: LPDT-59B
- 74: 活动号: LPDT-58
- 75: 活动号: LPDT-59
- 76: 活动号: LPDT-60,FPDT-54,RDPDT-56,TSPDT-52,MNFPDT-52,PROPDT-45,MKTPDT-52
- 77: 活动号: LPDT-70
- 78: 活动号: LPDT-80
- 79: 活动号: LPDT-82

| ID | WBS | Task | Duration | Start | Finish | Predecessors | Total slack | Free slack | Resources | Work | 活动号 | 活动编码 | 输出 | Text12 | Text30 |
| --- | --- | --- | --- | --- | --- | --- | --- | --- | --- | --- | --- | --- | --- | --- | --- |
| 80 | 2.2 | **研发** | 18.62d? | 2006-01-12 | 2006-02-07 |  | 24.1d |  |  | 256h |  |  |  |  |  |
| 81 | 1.9 | 需求分解分配 | 2.29d | 2006-01-18 | 2006-01-20 | 71 | 20.1d | 0d | SE; EE; SWE; ME | 32h | SE-50,EE-20,SWE-20,ME-20 | 001210500 | 选项评估与选择、分解和分配、配置 | 选项评估与选择、分解和分配、配置 | 001210500 |
| 82 | 1.10 | 可用性需求分解与分配 | 1d | 2006-01-18 | 2006-01-18 | 71 | 20.38d | 0d | UCD | 8h | UCD-50 | 001280500 | UI规格 | UI规格 | 001280500 |
| 83 | 1.22 | 知识产权分析 | 1d | 2006-01-19 | 2006-01-19 | 82 | 20.38d | 0.29d | SE | 8h | SE-98 | 001210980 |  |  | 001210980 |
| 84 | 1.12 | 架构应用 | 1d | 2006-01-20 | 2006-01-23 | 81, 83 | 20.1d | 0d | SE | 8h | SE-55 | 001210640 | 系统架构 | 系统架构 | 001210640 |
| 85 | 1.11 | 系统设计和设计规格定义 | 1d | 2006-01-23 | 2006-01-24 | 81, 84, 82 | 20.1d | 0d | SE | 8h | SE-60 | 001210600 | 设计规格 | 设计规格 | 001210600 |
| 86 | 1.12 | 架构评审 | 1d | 2006-01-24 | 2006-01-25 | 85 | 21.43d | 1.33d | SE | 8h | SE-64 | 001210640 | 系统架构 | 系统架构 | 001210640 |
| 87 | 1.13 | 制定Build计划 | 1.33d | 2006-01-24 | 2006-01-25 | 85 | 20.1d | 0d | SE; RDPDT | 16h | RDPDT-59,SE-65 | 001200590 | Build计划 | Build计划 | 001200590 |
| 88 | 1.14 | 更新需求跟踪关系 | 1d | 2006-01-25 | 2006-01-26 | 87 | 20.1d | 0d | SE | 8h | SE-66 | 001210660 |  |  | 001210660 |
| 89 | 1.17 | 系统规格基线化 | 1d | 2006-01-27 | 2006-01-30 | 137 | 20.1d | 0d | SE | 8h | SE-80 | 001210800 |  |  | 001210800 |
| 90 | 1.18 | 开发产品包需求跟踪矩阵 | 1d | 2006-01-30 | 2006-01-31 | 89 | 57.38d | 0d | SE | 8h | SE-85 | 001210850 |  |  | 001210850 |
| 91 | 1.20 | 开始监控设计规格变更 | 1d | 2006-01-31 | 2006-02-01 | 90 | 57.38d |  | SE | 8h | SE-90 | 001210900 |  |  | 001210900 |
| 92 | 1.21 | 概要设计 | 1d | 2006-01-30 | 2006-01-31 | 89 | 21.1d | 1d | SE | 8h | SE-95 | 001210950 | 概要设计 | 概要设计 | 001210950 |
| 93 | 1.25 | 硬件概要设计 | 1d | 2006-01-30 | 2006-01-31 | 89 | 21.1d | 1d | EE | 8h | EE-30 | 001240300 |  |  | 001240300 |
| 94 | 1.26 | 软件概要设计 | 1d | 2006-01-30 | 2006-01-31 | 89 | 21.1d | 1d | SWE | 8h | SWE-30 | 001250300 |  |  | 001250300 |
| 95 | 1.27 | 结构/电缆概要设计 | 1d | 2006-01-30 | 2006-01-31 | 89 | 21.1d | 1d | ME | 8h | ME-30 | 001260300 |  |  | 001260300 |
| 96 | 1.28 | 工业设计概要设计 | 1d | 2006-01-30 | 2006-01-31 | 89 | 21.1d | 1d | IDE | 8h | IDE-30 | 001270300 |  |  | 001270300 |
| 97 | 2.2.17 | 资料交付件设计 | 1d? | 2006-01-30 | 2006-01-31 | 89 | 57.38d | 0d | TD | 8h | TD-14 |  |  |  |  |
| 98 | 1.29 | 创建和评估高保真模型 | 1d | 2006-01-30 | 2006-01-31 | 89 | 20.1d | 0d | UCD | 8h | UCD-60 | 001280600 | 形成性测试报告 | 形成性测试报告 | 001280600 |
| 99 | 1.30 | 可用性交互设计 | 1d | 2006-01-31 | 2006-02-01 | 98 | 20.1d | 0d | UCD | 8h | UCD-70 | 001280700 |  |  | 001280700 |
| 100 | 2.2.20 | 开发BBOM | 1d? | 2006-01-12 | 2006-01-12 |  | 71d |  |  |  | RDPDT-59A |  |  |  |  |
| 101 | 1.31 | 制定测试及验证计划 | 1d | 2006-01-30 | 2006-01-31 | 89 | 21.1d | 1d | TE | 8h | TE-20 | 001220200 | 测试与验证计划、总体测试策略、E2E测试计划 | 测试与验证计划、总体测试策略、E2E测试计划 | 001220200 |
| 102 | 2.35 | 资料开发 | 1d | 2006-01-31 | 2006-02-01 | 97 | 57.38d |  | TD; SWE; EE; TE | 32h | TD-18 | 001230300 |  |  | 001230300 |
| 103 | 1.42 | 概要设计基线化 | 1d | 2006-02-02 | 2006-02-03 | 138 | 54.38d | 1d | SE | 8h | SE-110 | 001211100 |  |  | 001211100 |
| 104 | 1.43 | 监控和管理配置 | 1d | 2006-02-06 | 2006-02-07 | 103, 120 | 53.38d |  | SE | 8h | SE-120 | 001211200 |  |  | 001211200 |
| 105 | 1.51 | 制定标准计划 | 1d | 2006-02-02 | 2006-02-03 | 138 | 55.38d |  | SE | 8h | SE-121 | 001211210 | 产品标准计划 | 产品标准计划 | 001211210 |
| 106 | 1.54 | 优化开发项目计划（WBS 3/4） | 1d | 2006-02-02 | 2006-02-03 | 138 | 55.38d |  | RDPDT | 8h | RDPDT-60 | 001200600 |  |  | 001200600 |

| ID | WBS | Task | Duration | Start | Finish | Predecessors | Total slack | Free slack | Resources | Work | 活动号 | 活动编码 | Text30 | 输出 | Text12 |
| --- | --- | --- | --- | --- | --- | --- | --- | --- | --- | --- | --- | --- | --- | --- | --- |
| 107 | 2.3 | **市场** | 17.62d? | 2006-01-12 | 2006-02-06 |  | 34.71d |  |  | 24h |  |  |  |  |  |
| 108 | 2.3.1 | 制定配置原则 | 1d? | 2006-01-12 | 2006-01-12 |  | 34.71d | 14.62d |  |  | MSE-10 |  |  |  |  |
| 109 | 1.45 | 更新商业盈利计划 | 1d | 2006-02-02 | 2006-02-03 | 138, 108 | 20.1d | 0d | BP | 8h | BP-20 | 001820200 | 001820200 |  |  |
| 110 | 1.46 | 更新营销计划 | 1d | 2006-02-03 | 2006-02-06 | 109 | 20.1d | 0d | MKTPDT | 8h | MKTPDT-48 | 001800480 | 001800480 |  |  |
| 111 | 2.3.4 | 开发SBOM | 1d? | 2006-01-12 | 2006-01-12 |  | 71d |  |  |  | MKTPDT-49 |  |  |  |  |
| 112 | 2.3.5 | 优化营销项目计划（WBS 3/4） | 1d | 2006-02-02 | 2006-02-03 | 138 | 55.38d |  | MKTPDT | 8h | MKTPDT-50 | 001800500 | 001800500 |  |  |
| 113 | 2.4 | **技术服务** | 5d | 2006-01-27 | 2006-02-03 |  | 25.1d |  |  | 16h |  |  |  |  |  |
| 114 | 1.34 | 制定客户服务/支持计划 | 1d | 2006-01-27 | 2006-01-30 | 137 | 25.1d | 5d | TSS | 8h | TSPDT-49 | 001410200 | 001410200 | 客户服务及支持计划 | 客户服务及支持计划 |
| 115 | 2.4.2 | 优化技术服务项目计划（WBS 3/4） | 1d | 2006-02-02 | 2006-02-03 | 138 | 55.38d |  | TSPDT | 8h | TSPDT-50 | 001400500 | 001400500 |  |  |
| 116 | 2.5 | **制造** | 17.62d | 2006-01-12 | 2006-02-06 |  | 36.71d |  |  | 72h |  |  |  |  |  |
| 117 | 1.38 | 制定订单履行计划 | 1d | 2006-01-27 | 2006-01-30 | 137 | 25.1d | 5d | FF | 8h | FF-20 | 001540200 | 001540200 | 客户订单履行 | 客户订单履行 |
| 118 | 1.36 | 整合物料需求计划 | 1d | 2006-01-12 | 2006-01-12 |  | 71d |  | AME | 8h | AME-31 | 001510310 | 001510310 | 物料需求计划 | 物料需求计划 |
| 119 | 1.37 | 装备和工艺总体方案设计 | 1d | 2006-01-27 | 2006-01-30 | 137 | 59.38d |  | AME | 8h | AME-35 | 001510350 | 001510350 |  |  |
| 120 | 1.44.1 | 做出提前采购决定 | 2d | 2006-02-02 | 2006-02-06 | 138 | 53.38d | 0d | LPDT; MNFPDT; FPDT; PROPDT; AME | 32h | LPDT-57,MNFPDT-48,FPDT-48,PROPDT-48,AME-32 | 001100570 | 001100570 | 提前采购决策 | 提前采购决策 |
| 121 | 1.35 | 制定制造计划 | 1d | 2006-01-12 | 2006-01-12 |  | 71d |  | MNFPDT | 8h | MNFPDT-49 | 001510300 | 001510300 |  |  |
| 122 | 2.5.6 | 优化制造项目计划（WBS 3/4） | 1d | 2006-02-02 | 2006-02-03 | 138 | 55.38d |  | MNFPDT | 8h | MNFPDT-50 | 001500500 | 001500500 |  |  |
| 123 | 2.6 | **财务** | 16.62d | 2006-01-12 | 2006-02-03 |  | 36.71d |  |  | 32h |  |  |  |  |  |
| 124 | 1.8 | 分解目标成本 | 1d | 2006-01-18 | 2006-01-18 | 71 | 67d |  | FPDT | 8h | FPDT-47 | 001600470 | 001600470 | 目标成本管理 | 目标成本管理 |
| 125 | 1.52 | 优化财务评估 | 1d | 2006-02-02 | 2006-02-03 | 138 | 21.1d | 1d | FPDT | 8h | FPDT-50 | 001600500 | 001600500 | 销售收入预测、产品成本估计、功能性费用预测、开发项目成本预测、利润计算分析、财务分析，财务评估 | 销售收入预测、产品成本估计、功能性费用预测、开发项目成本预测、利润计算分析、财务分析，财务评估 |
| 126 | 1.53 | 制定优化的财务分析报告 | 1d | 2006-02-02 | 2006-02-03 | 138 | 21.1d | 1d | FPDT | 8h | FPDT-52 | 001600520 | 001600520 |  |  |
| 127 | 2.6.4 | 优化财务项目计划（WBS 3/4） | 1d | 2006-01-12 | 2006-01-12 |  | 71d |  | FPDT | 8h | FPDT-53 |  |  |  |  |
| 128 | 2.7 | **采购** | 7d | 2006-01-27 | 2006-02-07 |  | 25.1d |  |  | 24h |  |  |  |  |  |
| 129 | 1.19 | 更新Sourcing计划 | 1d | 2006-01-27 | 2006-01-30 | 137 | 25.1d | 5d | PROPDT | 8h | PROPDT-47 | 001700470 | 001700470 | 供应商/物料选择计划 | 供应商/物料选择计划 |
| 130 | 1.44.2 | 如果提前采购批准, 向Oracle发布初始BOM | 1d | 2006-02-06 | 2006-02-07 | 120 | 53.38d |  | PROPDT | 8h | PROPDT-49 | 001700490 | 001700490 |  |  |
| 131 | 2.7.3 | 优化采购项目计划（WBS 3/4） | 1d | 2006-02-02 | 2006-02-03 | 138 | 55.38d |  | PROPDT | 8h | PROPDT-50 | 001700500 | 001700500 |  |  |

| ID | WBS | Task | Duration | Start | Finish | Predecessors | Total slack | Free slack | Resources | Work | 活动号 | 活动编码 | Text30 | 输出 | Text12 |
| --- | --- | --- | --- | --- | --- | --- | --- | --- | --- | --- | --- | --- | --- | --- | --- |
| 132 | 2.8 | **PQA** | 1d | 2006-01-17 | 2006-01-17 |  | 33.71d |  |  | 8h |  |  |  |  |  |
| 133 | 1.6 | 优化产品质量目标和计划 | 1d | 2006-01-17 | 2006-01-17 | 70 | 33.71d | 13.62d | PQA | 8h | PQA-30 | 001110300 | 001110300 |  |  |
| 134 | 2.9 | **POP** | 22.62d | 2006-01-13 | 2006-02-14 |  | 20.1d |  |  | 16h |  |  |  |  |  |
| 135 | 1.2 | 增加扩展组成员并修改项目文档 | 1d | 2006-01-13 | 2006-01-13 | 68 | 20.1d | 0d | POP | 8h | POP-20 | 001120200 | 001120200 |  |  |
| 136 | 1.63.2 | 更新/关闭项目数据库 | 1d | 2006-02-13 | 2006-02-14 | 79 | 48.38d |  | POP | 8h | POP-25 | 001120250 | 001120250 |  |  |
| 137 | 2.10 | TR2 | 1d | 2006-01-26 | 2006-01-27 | 86, 88 | 20.1d | 0d | SE; PQA; PROPDT; RDPDT; TSPDT; FPDT; MKTPDT; MNFPDT; LPDT; 评审专家 | 80h |  |  |  |  |  |
| 138 | 2.11 | TR3 | 1d | 2006-02-01 | 2006-02-02 | 92, 93, 94, 95, 96, 98, 99, 101 | 20.1d | 0d | SE; PQA; PROPDT; RDPDT; TSPDT; FPDT; MKTPDT; MNFPDT; LPDT; 评审专家 | 80h |  |  |  |  |  |
| 139 | 2.12 | PDCP | 1d | 2006-02-09 | 2006-02-10 | 78 | 20.1d | 0d | IPMT | 8h | IPMT-40 | 001000400 | 001000400 | 早期销售公告（可选） | 早期销售公告（可选） |
| 140 | 3 | **IPD开发阶段E2E WBS 1、2级计划** | 46.9d? | 2006-01-12 | 2006-03-17 |  | 25.1d |  |  | 1160h |  |  |  |  |  |
| 141 | 3.1 | **LPDT管理** | 4d | 2006-02-10 | 2006-02-16 |  | 20.1d |  |  | 32h |  |  |  |  |  |
| 142 | 2.1 | 增扩PDT,进行产品开发全员任命 | 1d | 2006-02-10 | 2006-02-13 | 139 | 20.1d | 0d | IPMT | 8h | IPMT-50 | 001000500 | 001000500 |  |  |
| 143 | 2.3 | 召开项目开工会 | 1d | 2006-02-14 | 2006-02-15 | 212 | 20.1d | 0d | LPDT | 8h | LPDT-83 | 001100830 | 001100830 |  |  |
| 144 | 2.6 | 监控执行对外合作计划 | 1d | 2006-02-15 | 2006-02-16 | 143 | 46.38d |  | LPDT | 8h | LPDT-91 | 001100910 | 001100910 |  |  |
| 145 | 2.7 | 监控执行信息安全计划 | 1d | 2006-02-15 | 2006-02-16 | 143 | 46.38d |  | LPDT | 8h | LPDT-95 | 001100950 | 001100950 |  |  |
| 146 | 3.2 | **研发** | 45.9d | 2006-01-12 | 2006-03-16 |  | 26.1d |  |  | 656h |  |  |  |  |  |
| 147 | 2.9 | 组建Build团队 | 1d | 2006-02-15 | 2006-02-16 | 143 | 46.38d |  | RDPDT | 8h | RDPDT-66 | 001200660 | 001200660 |  |  |
| 148 | 2.10 | 执行标准活动 | 1d | 2006-02-15 | 2006-02-16 | 143 | 20.1d | 0d | SE | 8h | SE-127 | 001211270 | 001211270 | 产品标准工作报告 | 产品标准工作报告 |
| 149 | 2.11 | 发布初始BOM | 5d | 2006-02-16 | 2006-02-23 | 148 | 20.1d | 0d | SE | 40h | SE-130 | 001211300 | 001211300 |  |  |
| 150 | 2.18 | 监控管理配置及变更 | 1d | 2006-02-23 | 2006-02-24 | 149 | 24.38d | 4.29d | SE | 8h | SE-140 | 001211400 | 001211400 |  |  |
| 151 | 2.19 | 设计检视 | 1d | 2006-02-23 | 2006-02-24 | 149 | 40.38d |  | SE | 8h | SE-150 | 001211500 | 001211500 |  |  |
| 152 | 2.20 | 知识产权评估 | 1d | 2006-02-23 | 2006-02-24 | 149 | 24.38d | 4.29d | SE | 8h | SE-158 | 001211580 | 001211580 |  |  |
| 153 | 2.21 | 产品数据准确性管理与齐套 | 1d | 2006-02-23 | 2006-02-24 | 149 | 40.38d |  | SE | 8h | RDPDT-66B | 001211590 | 001211590 |  |  |
| 154 | 2.22 | 企业标准，企业内控标准起草 | 1d | 2006-02-23 | 2006-02-24 | 149 | 24.38d | 4.29d | SE | 8h | SE-156 | 001211560 | 001211560 |  |  |
| 155 | 2.23 | 硬件详细设计 | 1d | 2006-02-23 | 2006-02-24 | 149 | 20.1d | 0d | EE | 8h | EE-60 | 001240600 | 001240600 |  |  |
| 156 | 2.24 | CAD设计 | 1d | 2006-02-24 | 2006-02-27 | 155 | 20.1d | 0d | EE | 8h | EE-65 | 001240650 | 001240650 |  |  |
| 157 | 2.25 | 单元测试 | 1d | 2006-02-27 | 2006-02-28 | 156 | 20.1d | 0d | EE | 8h | EE-90 | 001240900 | 001240900 |  |  |
| 158 | 2.26 | 软件详细设计 | 1d | 2006-02-23 | 2006-02-24 | 149 | 22.1d | 2d | SWE | 8h | SWE-50 | 001250500 | 001250500 |  |  |
| 159 | 2.27 | 结构与电缆详细设计 | 1d | 2006-02-23 | 2006-02-24 | 149 | 23.38d | 0d | ME | 8h | ME-50 | 001260500 | 001260500 |  |  |
| 160 | 2.28 | 结构试制/试装/电缆/测试 | 1d | 2006-02-24 | 2006-02-27 | 159 | 23.38d | 3.29d | ME | 8h | ME-70 | 001260700 | 001260700 |  |  |
| 161 | 2.29 | 工业设计详细设计 | 1d | 2006-02-23 | 2006-02-24 | 149 | 40.38d |  | IDE | 8h | IDE-50 | 001270500 | 001270500 |  |  |
| 162 | 2.30 | 评估设计和实现间的保真度 | 1d | 2006-02-23 | 2006-02-24 | 149 | 24.38d | 4.29d | UCD | 8h | UCD-80 | 001280800 | 001280800 |  |  |
| 163 | 2.31 | 测试设计和更新测试计划 | 1d | 2006-02-23 | 2006-02-24 | 149 | 22.1d | 2d | TE | 8h | TE-30 | 001220300 | 001220300 |  |  |
| 164 | 2.32 | 开发'开发'用测试工具 | 1d | 2006-02-23 | 2006-02-24 | 149 | 22.1d | 2d | TE | 8h | TE-40 | 001220400 | 001220400 |  |  |
| 165 | 2.33 | 硬件设计审查 | 1d | 2006-02-23 | 2006-02-24 | 149 | 22.1d | 2d | TE | 8h | TE-45 | 001220450 | 001220450 |  |  |
| 166 | 2.34 | BBIT | 2.29d | 2006-02-28 | 2006-03-02 | 157, 158, 163, 164, 165 | 20.1d | 0d | TE; RDPDT; EE; SWE | 32h | RDPDT-67,EE-95,SWE-95,TE-50 | 001200670 | 001200670 |  |  |
| 167 | 2.35 | 资料开发 | 1d | 2006-01-31 | 2006-02-01 | 97 | 57.38d |  | TD; SWE; EE; TE | 32h | TD-18 | 001230300 | 001230300 |  |  |
| 168 | 2.43 | 更新BOM并在初始生产前向制造发布（SIT和BETA系统） | 1d | 2006-03-03 | 2006-03-06 | 213 | 33.1d | 0d | SE | 8h | RDPDT-67A | 001211610 | 001211610 |  |  |
| 169 | 2.44 | 企业标准和内控质量标准定稿 | 1d | 2006-03-06 | 2006-03-07 | 168 | 33.1d |  | SE | 8h | SE-162 | 001211620 | 001211620 |  |  |
| 170 | 2.46 | 协作： 进行SDV(原型) | 4d | 2006-03-03 | 2006-03-09 | 213 | 20.1d | 0d | TE; EE; SWE; ME; TD（新增） | 160h | TE-55,EE-120,SWE-110,ME-110 | 001220550 | 001220550 |  |  |
| 171 | 2.46.5 | 进行可用性评估 | 1d | 2006-03-10 | 2006-03-13 | 214 | 29.1d |  | UCD | 8h | UCD-90 | 001280900 | 001280900 |  |  |
| 172 | 2.56 | 开发集成配置器 | 1d | 2006-01-12 | 2006-01-12 |  | 70d | 0d | SE | 8h | SE-163B | 001211632 | 001211632 |  |  |
| 173 | 2.60 | 更新BOM并发布最新版本给制造（SVT和BETA） | 1d | 2006-03-10 | 2006-03-13 | 214 | 29.1d |  | SE | 8h | RDPDT-67B | 001211700 | 001211700 |  |  |
| 174 | 2.61 | 更新测试计划(包括系统配置器测试) | 1d | 2006-03-10 | 2006-03-13 | 214 | 29.1d |  | TE | 8h | TE-57 | 001220570 | 001220570 |  |  |
| 175 | 2.64 | 协作：进行SIT测试 (初始产品) | 4d | 2006-03-10 | 2006-03-16 | 214 | 20.1d | 0d | TE; EE; SWE; ME; TSS; TD（新增） | 192h | TE-60,EE-140,SWE-130,ME-122,TSS-41,TSS-42 | 001220600 | 001220600 |  |  |
| 176 | 3.2.36 | 验证产品配置包 | 1d | 2006-01-13 | 2006-01-13 | 172 | 70d |  | TE | 8h | TE-65 | 001220650 | 001220650 |  |  |

| ID | WBS | Task | Duration | Start | Finish | Predecessors | Total slack | Free slack | Resources | Work | 活动号 | 活动编码 | Text30 |
| --- | --- | --- | --- | --- | --- | --- | --- | --- | --- | --- | --- | --- | --- |
| 177 | 3.3 | **市场** | 44.9d? | 2006-01-12 | 2006-03-15 |  | 27.1d |  |  | 72h |  |  |  |
| 178 | 2.5 | 管理产品包需求变更 | 1d | 2006-02-10 | 2006-02-13 | 139 | 49.38d |  | RME | 8h | RME-60 | 001810600 | 001810600 |
| 179 | 2.16 | 制定市场宣传计划 | 1d | 2006-01-12 | 2006-01-12 |  | 57d | 35.9d | IMC | 8h | IMC-30 | 001830300 | 001830300 |
| 180 | 2.17 | 确定早期客户清单 | 1d | 2006-01-12 | 2006-01-12 |  | 57d | 35.9d | MSE | 8h | MSE-20 | 001840200 | 001840200 |
| 181 | 2.48 | 更新早期客户清单 | 1d | 2006-03-03 | 2006-03-06 | 213, 180, 179 | 21.1d | 0d | MSE | 8h | MSE-35 | 001840350 | 001840350 |
| 182 | 3.3.5 | 开发产品配置包Beta版 | 1d? | 2006-03-06 | 2006-03-07 | 181 | 21.1d | 0d |  |  | MKTPDT-66 |  |  |
| 183 | 2.49 | 更新营销计划 | 1d | 2006-03-07 | 2006-03-08 | 182 | 21.1d | 1d | MKTPDT | 8h | MKTPDT-68 | 001800680 | 001800680 |
| 184 | 2.66 | 向价格和预测提供输入 | 1d | 2006-03-10 | 2006-03-13 | 214, 183 | 21.1d | 0d | BP | 8h | BP-30 | 001820300 | 001820300 |
| 185 | 2.67 | 监控商业盈利计划 | 1d | 2006-03-13 | 2006-03-14 | 184 | 21.1d | 0d | BP | 8h | BP-35 | 001820350 | 001820350 |
| 186 | 2.68 | 准备内部发布信 | 1d | 2006-03-10 | 2006-03-13 | 183, 214 | 29.1d |  | IMC | 8h | IMC-35 | 001830350 | 001830350 |
| 187 | 3.3.10 | 开发产品配置包正式版 | 1d? | 2006-01-12 | 2006-01-12 |  | 71d |  |  |  | MKTPDT-67 |  |  |
| 188 | 2.69 | 更新营销计划 | 1d | 2006-03-14 | 2006-03-15 | 185 | 21.1d | 1d | MKTPDT | 8h | MKTPDT-69 | 001800690 | 001800690 |
| 189 | 3.4 | **技术服务** | 1d | 2006-02-23 | 2006-02-24 |  | 40.38d |  |  | 16h |  |  |  |
| 190 | 2.37 | 准备可安装性/可服务性测试 | 1d | 2006-02-23 | 2006-02-24 | 149 | 40.38d |  | TSS | 8h | TSS-38 | 001410380 | 001410380 |
| 191 | 2.38 | 技术服务准备 | 1d | 2006-02-23 | 2006-02-24 | 149 | 40.38d |  | TSS | 8h | TSS-30 | 001410300 | 001410300 |
| 192 | 3.5 | **制造** | 42.9d | 2006-01-12 | 2006-03-13 |  | 29.1d |  |  | 96h |  |  |  |
| 193 | 2.12 | 设计制造工艺 | 1d | 2006-01-12 | 2006-01-12 |  | 60d | 35.9d | AME | 8h | AME-40 | 001510400 | 001510400 |
| 194 | 2.13 | 设计生产测试装备 | 1d | 2006-01-12 | 2006-01-12 |  | 60d | 35.9d | AME | 8h | AME-45 | 001510450 | 001510450 |
| 195 | 2.14 | 下达原型机物料计划 | 1d | 2006-01-12 | 2006-01-12 |  | 60d | 39.9d | AME | 8h | AME-46 | 001510460 | 001510460 |
| 196 | 2.50 | 下达初始产品物料计划 | 1d | 2006-03-06 | 2006-03-07 | 168 | 33.1d |  | AME | 8h | AME-47 | 001510470 | 001510470 |
| 197 | 2.52 | 试制准备 | 1d | 2006-03-03 | 2006-03-06 | 193, 194, 213 | 32.1d | 1d | PP | 8h | PP-05 | 001520050 | 001520050 |
| 198 | 2.53 | 开发生产测试设备 | 1d | 2006-03-03 | 2006-03-06 | 193, 194, 213 | 32.1d | 1d | AME | 8h | AME-50 | 001510500 | 001510500 |
| 199 | 2.54 | 开发制造工艺 | 2d | 2006-03-03 | 2006-03-07 | 193, 194, 213 | 31.1d | 0d | AME | 16h | AME-60 | 001510600 | 001510600 |
| 200 | 2.55 | 执行订单履行计划 | 1d | 2006-03-03 | 2006-03-06 | 213 | 34.1d |  | FF | 8h | FF-30 | 001540300 | 001540300 |
| 201 | 2.57 | 下达Ramp Up产品物料计划 | 1d | 2006-03-07 | 2006-03-08 | 197, 198, 199 | 31.1d | 2d | AME | 8h | AME-61 | 001510610 | 001510610 |
| 202 | 2.62 | 生产初始产品 | 1d | 2006-03-10 | 2006-03-13 | 214 | 29.1d |  | PP | 8h | PP-10 | 001520100 | 001520100 |
| 203 | 2.63 | 制造系统验证 | 1d | 2006-03-10 | 2006-03-13 | 214 | 29.1d |  | PP | 8h | PP-15 | 001520150 | 001520150 |

| ID | WBS | Task | Duration | Start | Finish | Predecessors | Total slack | Free slack | Resources | Work | 活动编码 | Text30 | 输出 | Text12 |
| --- | --- | --- | --- | --- | --- | --- | --- | --- | --- | --- | --- | --- | --- | --- |
| 204 | 3.6 | **财务** | 1d | 2006-02-15 | 2006-02-16 |  | 46.38d |  |  | 8h |  |  |  |  |
| 205 | 2.8 | 跟踪目标成本 | 1d | 2006-02-15 | 2006-02-16 | 143 | 46.38d |  | FPDT | 8h | 001600560 | 001600560 |  |  |
| 206 | 3.7 | **采购** | 42.9d | 2006-01-12 | 2006-03-13 |  | 29.1d |  |  | 32h |  |  |  |  |
| 207 | 2.15 | 选择供应商 | 1d | 2006-01-12 | 2006-01-12 |  | 59d | 0d | PRO | 8h | 001271200 | 001271200 |  |  |
| 208 | 2.36 | 订购原型机物料 | 1d | 2006-01-13 | 2006-01-13 | 207 | 59d | 34.9d | PRO | 8h | 001710300 | 001710300 |  |  |
| 209 | 2.51 | 定购初始产品物料 | 1d | 2006-03-03 | 2006-03-06 | 208, 213 | 34.1d |  | PRO | 8h | 001710390 | 001710390 |  |  |
| 210 | 2.65 | 定购RampUp产品物料 | 1d | 2006-03-10 | 2006-03-13 | 214, 201 | 29.1d |  | PRO | 8h | 001710450 | 001710450 |  |  |
| 211 | 3.9 | **POP** | 1d | 2006-02-13 | 2006-02-14 |  | 20.1d |  |  | 8h |  |  |  |  |
| 212 | 2.2 | 更新项目环境 | 1d | 2006-02-13 | 2006-02-14 | 142 | 20.1d | 0d | POP | 8h | 001120300 | 001120300 |  |  |
| 213 | 3.10 | TR4 | 1d | 2006-03-02 | 2006-03-03 | 150, 152, 154, 160, 162, 166 | 20.1d | 0d | SE; PQA; PROPDT; RDPDT; TSPDT; FPDT; MKTPDT; MNFPDT; LPDT; 评审专家 | 80h | 001211600 | 001211600 |  |  |
| 214 | 3.11 | TR4A | 1d | 2006-03-09 | 2006-03-10 | 183, 170, 193, 194, 195, 208 | 20.1d | 0d | SE; PQA; PROPDT; RDPDT; TSPDT; FPDT; MKTPDT; MNFPDT; LPDT; 评审专家 | 80h | 001211650 | 001211650 |  |  |
| 215 | 3.12 | TR5 | 1d | 2006-03-16 | 2006-03-17 | 175, 188 | 20.1d | 0d | SE; PQA; PROPDT; RDPDT; TSPDT; FPDT; MKTPDT; MNFPDT; LPDT; 评审专家 | 80h | 001212300 | 001212300 |  |  |
| 216 | 3 | **IPD验证阶段E2E WBS 1、2级计划** | 51.9d | 2006-01-12 | 2006-03-24 |  | 20.1d |  |  | 977.85h |  |  |  |  |
| 217 | 4.1 | **LPDT管理** | 11d | 2006-01-18 | 2006-02-01 |  | 44d |  |  | 289.85h |  |  |  |  |
| 218 | 3.29 | 发布准备评估 | 2d | 2006-01-18 | 2006-01-19 | 254 | 44d | 0d | LPDT; FPDT; RDPDT; TSPDT; MNFPDT; PROPDT; MKTPDT; SE; TE; TD; FF; MSE | 192h | 001101100 | 001101100 |  |  |
| 219 | 3.31 | 准备可获得性决策评审材料 | 5d | 2006-01-20 | 2006-01-26 | 218 | 44d | 0d | LPDT; FPDT; RDPDT; TSPDT; MNFPDT; PROPDT; MKTPDT | 65.85h | 001101200 | 001101200 |  |  |
| 220 | 3.32 | 与IPMT沟通 | 2d | 2006-01-27 | 2006-01-30 | 219 | 44d | 0d | LPDT | 16h | 001101300 | 001101300 |  |  |
| 221 | 3.33 | 项目经验教训总结 | 2d | 2006-01-31 | 2006-02-01 | 220 | 44d | 0d | LPDT | 16h | 001101320 | 001101320 |  |  |
| 222 | 4.2 | **研发** | 49.9d | 2006-01-12 | 2006-03-22 |  | 22.1d |  |  | 200h |  |  |  |  |
| 223 | 3.1 | 更新BOM并将最新版本发布给制造 | 3d | 2006-03-17 | 2006-03-22 | 215 | 22.1d |  | SE | 24h | 001212350 | 001212350 |  |  |
| 224 | 3.6 | 监控管理配置及变更 | 2d | 2006-03-17 | 2006-03-21 | 215 | 21.1d | 0d | SE | 16h | 001212400 | 001212400 |  |  |
| 225 | 3.7 | 设计检视 | 2d | 2006-03-17 | 2006-03-21 | 215 | 23.1d |  | SE | 16h | 001212500 | 001212500 |  |  |
| 226 | 3.8 | 系统验证测试（SVT） | 2d | 2006-03-17 | 2006-03-21 | 215 | 23.1d |  | TE | 16h | 001220700 | 001220700 |  |  |
| 227 | 3.9 | 内部认证/标杆测试 | 2d | 2006-03-17 | 2006-03-21 | 215 | 23.1d |  | TE | 16h | 001220710 | 001220710 | 系统认证和标杆测试 | 系统认证和标杆测试 |
| 228 | 3.21 | 合作：进行Beta测试 | 2d | 2006-01-12 | 2006-01-13 |  | 44d | 0d | TE; TSS | 32h | 001220750 | 001220750 | Beta测试 | Beta测试 |
| 229 | 3.22 | 提供产品配置给定单履行 | 2d | 2006-03-17 | 2006-03-21 | 215 | 23.1d |  | RDPDT | 16h | 001200690 | 001200690 |  |  |
| 230 | 3.23 | 外部系统认证测试和标杆测试 | 2d | 2006-01-12 | 2006-01-13 |  | 70d |  | TE | 16h | 001220800 | 001220800 | 系统认证和标杆测试 | 系统认证和标杆测试 |
| 231 | 3.24 | SVT2 | 2d | 2006-01-16 | 2006-01-17 | 228 | 68d |  | TE | 16h | 001220760 | 001220760 |  |  |
| 232 | 3.27 | 更新BOM并发布最新版本给制造 | 2d | 2006-01-18 | 2006-01-19 | 254 | 66d |  | SE | 16h | 001212710 | 001212710 |  |  |
| 233 | 4.2.16 | ESP发货UCD评估 | 2d | 2006-01-20 | 2006-01-23 | 241 | 64d |  | UCD | 16h | 001281000 | 001281000 |  |  |

Notes:
- 205: 活动号: FPDT-56
- 207: 活动号: PRO-20
- 208: 活动号: PRO-30
- 209: 活动号: PRO-39
- 210: 活动号: PRO-45
- 212: 活动号: POP-30
- 218: 活动号: LPDT-110，FPDT-60,RDPDT-70,RSPDT-60,MNFPDT-60,SE-280,TE-90,TD-60,FF-60,MSE-47
- 219: 活动号: LPDT-120,FPDT-70,RDPDT-80,TSPDT-70,MNFPDT-70,PROPDT-70,MKTPDT-80
- 220: 活动号: LPDT-130
- 221: 活动号: LPDT-132
- 223: 活动号: RDPDT-68A
- 224: 活动号: SE-240
- 225: 活动号: SE-250
- 226: 活动号: TE-70
- 227: 活动号: TE-71
- 228: 活动号: TE-75,TSS-45
- 229: 活动号: RDPDT-69
- 230: 活动号: TE-80
- 231: 活动号: TE-76
- 232: 活动号: RDPDT-69A
- 233: 活动号: UCD-100

| ID | WBS | Task | Duration | Start | Finish | Predecessors | Total slack | Free slack | Resources | Work | 活动号 | 活动编码 | Text30 | 输出 | Text12 |
| --- | --- | --- | --- | --- | --- | --- | --- | --- | --- | --- | --- | --- | --- | --- | --- |
| 234 | 4.3 | **市场** | 50.9d | 2006-01-12 | 2006-03-23 |  | 21.1d |  |  | 176h |  |  |  |  |  |
| 235 | 3.4 | 在滚动预测中包含产品包 | 2d | 2006-03-17 | 2006-03-21 | 215 | 21.1d | 0d | BP | 16h | BP-40 | 001820400 | 001820400 |  |  |
| 236 | 3.5 | 进行内部发布 | 2d | 2006-03-17 | 2006-03-21 | 215 | 23.1d |  | IMC | 16h | IMC-40 | 001830400 | 001830400 |  |  |
| 237 | 3.17 | 向定价提供输入 | 2d | 2006-03-21 | 2006-03-23 | 235 | 21.1d |  | BP | 16h | BP-45 | 001820450 | 001820450 |  |  |
| 238 | 3.18 | 进行销售培训 | 2d | 2006-03-17 | 2006-03-21 | 215 | 23.1d |  | MSE | 16h | MSE-40 | 001840400 | 001840400 |  |  |
| 239 | 3.19 | 验证配置器 | 2d | 2006-03-21 | 2006-03-23 | 224 | 21.1d |  | MSE | 16h | MSE-43 | 001840430 | 001840430 |  |  |
| 240 | 3.20 | 发布产品配置包就绪公告 | 2d | 2006-01-12 | 2006-01-13 |  | 70d |  | SE | 16h | MKTPDT-69B | 001212600 | 001212600 |  |  |
| 241 | 3.28 | 合作：ESP程序（可选） | 2d | 2006-01-18 | 2006-01-19 | 254 | 64d | 0d | MSE; TSS; SE; MOPS; FF | 80h | MSE-46,TSS-50,MSE-45,SE-275,TSS-65,MOPS-05,FF-55 | 001840460 | 001840460 |  |  |
| 242 | 4.5 | **制造** | 4d | 2006-03-17 | 2006-03-23 |  | 20.1d |  |  | 64h |  |  |  |  |  |
| 243 | 3.12 | 继续制造系统验证 | 2d | 2006-03-17 | 2006-03-21 | 215 | 23.1d |  | PP | 16h | PP-30 | 001520300 | 001520300 | 制造系统验证（试制验证）报告 | 制造系统验证（试制验证）报告 |
| 244 | 3.13 | 下达生产物料计划 | 2d | 2006-03-17 | 2006-03-21 | 215 | 20.1d | 0d | AME | 16h | AME-70 | 001510700 | 001510700 |  |  |
| 245 | 3.14 | 执行订单履行活动 | 2d | 2006-03-17 | 2006-03-21 | 215 | 21.1d | 0d | FF | 16h | FF-40 | 001540400 | 001540400 |  |  |
| 246 | 3.15 | 建立订单环境 | 2d | 2006-03-21 | 2006-03-23 | 245 | 21.1d |  | FF | 16h | FF-50 | 001540500 | 001540500 |  |  |
| 247 | 4.6 | **财务** | 2d | 2006-03-17 | 2006-03-21 |  | 23.1d |  |  | 16h |  |  |  |  |  |
| 248 | 3.3 | 继续跟踪目标成本 | 2d | 2006-03-17 | 2006-03-21 | 215 | 23.1d |  | FPDT | 16h | FPDT-59 | 001600590 | 001600590 | 目标成本跟踪 | 目标成本跟踪 |
| 249 | 4.7 | **采购** | 47.9d | 2006-01-18 | 2006-03-24 |  | 20.1d |  |  | 48h |  |  |  |  |  |
| 250 | 3.16 | 采购长货期生产物料 | 3d | 2006-03-21 | 2006-03-24 | 244 | 20.1d |  | PRO | 24h | PRO-50 | 001710500 | 001710500 |  |  |
| 251 | 3.30 | 采购生产物料 | 3d | 2006-01-18 | 2006-01-20 | 254 | 65d |  | PRO | 24h | PRO-55 | 001710550 | 001710550 |  |  |
| 252 | 4.9 | **POP** | 2d | 2006-02-03 | 2006-02-06 |  | 54d |  |  | 16h |  |  |  |  |  |
| 253 | 3.35 | 更新/关闭项目数据库 | 2d | 2006-02-03 | 2006-02-06 | 255 | 54d |  | POP | 16h | POP-39,POP-40 | 001120390 | 001120390 |  |  |
| 254 | 4.9.2 | TR6 | 2d | 2006-01-16 | 2006-01-17 | 228 | 44d | 0d | SE; PQA; PROPDT; RDPDT; TSPDT; FPDT; MKTPDT; MNFPDT; LPDT; 评审专家 | 160h |  |  |  |  |  |
| 255 | 4.9.3 | ADCP | 1d | 2006-02-02 | 2006-02-02 | 221 | 44d | 0d | IPMT | 8h | IPMT-60 | 001000600 | 001000600 | 可获得性DCP确认书 | 可获得性DCP确认书 |
| 256 | 5 | **IPD发布阶段E2E WBS 1、2级计划** | 12d | 2006-02-03 | 2006-02-20 |  | 44d |  |  | 553.78h |  |  |  |  |  |
| 257 | 5.1 | **LPDT管理** | 12d | 2006-02-03 | 2006-02-20 |  | 44d |  |  | 192h |  |  |  |  |  |
| 258 | 5.1.1 | 继续监控对外合作计划执行 | 12d | 2006-02-03 | 2006-02-20 | 255 | 44d |  | LPDT | 96h | LPDT-143 | 001101430 |  |  |  |
| 259 | 4.17 | 项目结束经验教训总结 | 2d | 2006-02-03 | 2006-02-06 | 255 | 44d | 0d | LPDT | 16h | LPDT-150 | 001101500 | 001101500 |  |  |
| 260 | 4.21 | 制定和沟通GA确认通知 | 10d | 2006-02-07 | 2006-02-20 | 259 | 44d |  | LPDT | 80h | LPDT-155 | 001101550 | 001101550 | 一般可获得性确认书 | 一般可获得性确认书 |

| ID | WBS | Task | Duration | Start | Finish | Predecessors | Total slack | Free slack | Resources | Work | 活动号 | 活动编码 | Text30 |
| --- | --- | --- | --- | --- | --- | --- | --- | --- | --- | --- | --- | --- | --- |
| 261 | 5.2 | **研发** | 2d | 2006-02-03 | 2006-02-06 |  | 54d |  |  | 48h |  |  |  |
| 262 | 4.2 | Beta测试退出检查 | 2d | 2006-02-03 | 2006-02-06 | 255 | 54d |  | TE | 16h | TE-94 | 001220940 | 001220940 |
| 263 | 5.2.4 | ESP发货UCD评估 | 2d | 2006-02-03 | 2006-02-06 | 255 | 54d |  | UCD | 16h | UCD-110 | 001281100 | 001281100 |
| 264 | 5.2.5 | 进行基线评估 | 2d | 2006-02-03 | 2006-02-06 | 255 | 54d |  | UCD | 16h | UCD-120 | 001281200 | 001281200 |
| 265 | 5.3 | **市场** | 6d | 2006-02-03 | 2006-02-10 |  | 50d |  |  | 217.78h |  |  |  |
| 266 | 4.7 | 确定发布材料包 | 2d | 2006-02-03 | 2006-02-06 | 255 | 50d | 0d | IMC | 16h | IMC-50 | 001830500 | 001830500 |
| 267 | 4.8 | 向办事处/地区部分发营销/销售资料 | 2d | 2006-02-03 | 2006-02-06 | 255 | 50d | 0d | MSE | 16h | MSE-50 | 001850500 | 001850500 |
| 268 | 4.9 | 继续ESP活动 | 3d | 2006-02-03 | 2006-02-07 | 255 | 53d |  | MSE; SE; TSS; MOPS; FF | 41.78h | MSE-52,SE-290,TSS-70,MOPS-30,FF-75 | 001840520 | 001840520 |
| 269 | 4.10 | 向PDT和销售人员发布价格 | 2d | 2006-02-03 | 2006-02-06 | 255 | 52d | 0d | MKTPDT | 16h | MKTPDT-100 | 001801100 | 001801100 |
| 270 | 4.13 | 培训销售和市场力量 | 2d | 2006-02-07 | 2006-02-08 | 267 | 50d | 0d | MSE | 16h | MSE-54 | 001840540 | 001840540 |
| 271 | 4.14 | 完成培训 | 2d | 2006-02-09 | 2006-02-10 | 270 | 50d |  | MSE | 16h | MSE-55 | 001840550 | 001840550 |
| 272 | 4.15 | 完成发布准备/透露/培训 | 2d | 2006-02-07 | 2006-02-08 | 266 | 50d | 0d | IMC | 16h | IMC-55 | 001830550 | 001830550 |
| 273 | 4.16 | 发布产品包与GA时间点 | 2d | 2006-02-07 | 2006-02-08 | 269 | 52d |  | MKTPDT | 16h | MKTPDT-110 | 001801100 | 001801100 |
| 274 | 4.18 | 促销产品包 | 2d | 2006-02-09 | 2006-02-10 | 272, 267 | 50d |  | IMC | 16h | IMC-59 | 001830590 | 001830590 |
| 275 | 4.19 | 监控销售和客户 | 2d | 2006-02-09 | 2006-02-10 | 272, 267 | 50d |  | MSE | 16h | MSE-57 | 001840570 | 001840570 |
| 276 | 4.20 | 促销产品包 | 2d | 2006-02-09 | 2006-02-10 | 272, 267 | 50d |  | MSE | 16h | MSE-59 | 001840590 | 001840590 |
| 277 | 4.23 | 执行GA活动 | 2d | 2006-02-07 | 2006-02-08 | 259 | 52d |  | MKTPDT | 16h | MKTPDT-120 | 001801200 | 001801200 |
| 278 | 5.4 | **技术服务** | 2d | 2006-02-03 | 2006-02-06 |  | 54d |  |  | 16h |  |  |  |
| 279 | 4.11 | 各局点升级到GA级产品/拆除局点设备 | 2d | 2006-02-03 | 2006-02-06 | 255 | 54d |  | TSS | 16h | TSS-72 | 001410720 | 001410720 |
| 280 | 5.5 | **制造** | 4d | 2006-02-03 | 2006-02-08 |  | 52d |  |  | 64h |  |  |  |
| 281 | 4.4 | 向生产操作切换 | 2d | 2006-02-03 | 2006-02-06 | 255 | 52d | 0d | MOPS | 16h | MOPS-10 | 001530100 | 001530100 |
| 282 | 4.5 | Ramp up生产 | 2d | 2006-02-07 | 2006-02-08 | 281 | 52d |  | MOPS | 16h | MOPS-20 | 001530200 | 001530200 |
| 283 | 4.6 | 完成订单环境设置 | 2d | 2006-02-03 | 2006-02-06 | 255 | 52d | 0d | FF | 16h | FF-70 | 001540700 | 001540700 |
| 284 | 4.12 | 渠道备货 | 2d | 2006-02-07 | 2006-02-08 | 283 | 52d |  | FF | 16h | FF-80 | 001540800 | 001540800 |

| ID | WBS | Task | Duration | Start | Finish | Predecessors | Total slack | Resources | Work | 活动号 | 活动编码 | Text30 |
| --- | --- | --- | --- | --- | --- | --- | --- | --- | --- | --- | --- | --- |
| 285 | 5.8 | **POP** | 2d | 2006-02-07 | 2006-02-08 |  | 52d |  | 16h |  |  |  |
| 286 | 4.22 | 关闭项目数据库 | 2d | 2006-02-07 | 2006-02-08 | 259 | 52d | POP | 16h | POP-50 | 001120500 | 001120500 |
